| row_number | name | level | status | percent_complete | start_date | end_date | baseline_start | baseline_finish | variance_days | duration_days | critical | total_float | assigned_to | rag_raw | is_milestone_or_phase | phase_name | not_applicable |
| --- | --- | --- | --- | --- | --- | --- | --- | --- | --- | --- | --- | --- | --- | --- | --- | --- | --- |
| 2 | Zycus - Titan S2P Implementation | 0 | In Progress | 0.71 | 2025-12-05 | 2026-12-07 | 2026-05-03 | 2026-05-20 | -2 | 262.0 | True | 0.0 |  |  |  |  |  |
| 3 | Phase 1- S2C | 0 | In Progress | 0.92 | 2025-12-05 | 2026-07-14 | 2025-12-05 | 2026-07-02 | -6 | 158.0 |  | 104.0 | abhilasha.s@zycus.com | Yellow |  |  |  |
| 4 | Contract Sign Off | 1 | Completed | 1.0 | 2025-12-05 | 2025-12-05 | 2025-12-05 | 2025-12-05 | 0 | 1.0 |  | 261.0 | abhilasha.s@zycus.com | Green | True | Project Initiation |  |
| 5 | Contract signing between Titan and Zycus | 2 | Completed | 1.0 | 2025-12-05 | 2025-12-05 | 2025-12-05 | 2025-12-05 | 0 | 1.0 |  | 261.0 | Titan Project Sponsor, Zycus Sales | Green |  | Project Initiation |  |
| 6 | Contract Sign Off | 2 | Completed | 1.0 | 2025-12-05 | 2025-12-05 | 2025-12-05 | 2025-12-05 | 0 | 0.0 |  | 261.9999999653 |  | Green |  | Project Initiation |  |
| 7 | Project Initiation and Data Gathering | 1 | Completed | 1.0 | 2025-12-15 | 2026-02-27 | 2025-12-15 | 2026-02-27 | 0 | 55.0 |  | 201.0 | abhilasha.s@zycus.com | Green | True | Data Gathering |  |
| 8 | Project Kick Off | 2 | Completed | 1.0 | 2025-12-15 | 2026-02-06 | 2025-12-15 | 2026-02-06 | 0 | 40.0 |  | 216.0 |  | Green |  | Data Gathering |  |
| 9 | Review Contract Scope | 3 | Completed | 1.0 | 2025-12-15 | 2025-12-15 | 2025-12-15 | 2025-12-15 | 0 | 1.0 |  | 255.0 | Zycus Project Resources Manager | Green |  | Data Gathering |  |
| 10 | Assign Project Team and Internal communication | 3 | Completed | 1.0 | 2025-12-19 | 2025-12-19 | 2025-12-19 | 2025-12-19 | 0 | 1.0 |  | 251.0 | Zycus Project Resources Manager | Green |  | Data Gathering |  |
| 11 | Zycus Project Team mobilization and Team alignment | 3 | Completed | 1.0 | 2025-12-19 | 2025-12-19 | 2025-12-19 | 2025-12-19 | 0 | 1.0 |  | 251.0 | Zycus Project Resources Manager | Green |  | Data Gathering |  |
| 12 | Setup Project [Server, Email alias, Internal Applications, Central Drive, Internal ticket for STAGING Set Up] | 3 | Completed | 1.0 | 2026-01-05 | 2026-01-05 | 2026-01-05 | 2026-01-05 | 0 | 1.0 |  | 240.0 | Zycus Project Team | Green |  | Data Gathering |  |
| 13 | Raise ticket for STAGING Set Up creation | 3 | Completed | 1.0 | 2026-01-05 | 2026-01-05 | 2026-01-05 | 2026-01-05 | 0 | 1.0 |  | 240.0 | Zycus Product Specialist | Green |  | Data Gathering |  |
| 14 | Sales / PreSales / Pilots handover | 3 | Completed | 1.0 | 2026-01-07 | 2026-01-07 | 2026-01-07 | 2026-01-07 | 0 | 1.0 |  | 238.0 | Zycus Project Manager, Zycus Project Team, Zycus Sales | Green |  | Data Gathering |  |
| 15 | Pre-kick off meeting with internal stakeholders | 3 | Completed | 1.0 | 2026-01-16 | 2026-01-16 | 2026-01-16 | 2026-01-16 | 0 | 1.0 |  | 231.0 | Zycus Project Manager, Zycus Project Team, Zycus Sales | Green |  | Data Gathering |  |
| 16 | Finalize kick off meeting schedule | 3 | Completed | 1.0 | 2026-01-16 | 2026-01-16 | 2026-01-16 | 2026-01-16 | 0 | 1.0 |  | 231.0 | Titan Project Manager, Titan Project Sponsor, Zycus Sales | Green |  | Data Gathering |  |
| 17 | Kick off meeting [Introduction Meeting] | 3 | Completed | 1.0 | 2026-01-20 | 2026-01-20 | 2026-01-20 | 2026-01-20 | 0 | 1.0 |  | 229.0 | Titan Core Project Team, Titan Project Manager, Zycus Consultant, Zycus Product Specialist, Zycus Project Manager, Zycus Project Team | Green |  | Data Gathering |  |
| 18 | Share Product specific templates [Questionnaire, Product specific Pre-Requisites, Workshop Agenda, User Details template] with Titan | 3 | Completed | 1.0 | 2026-02-02 | 2026-02-06 | 2026-02-02 | 2026-02-06 | 0 | 5.0 |  | 216.0 | Zycus Product Specialist, Zycus Project Manager | Green |  | Data Gathering |  |
| 19 | Zycus Project Set-Up | 2 | Completed | 1.0 | 2026-01-26 | 2026-02-02 | 2026-01-26 | 2026-02-02 | 0 | 6.0 |  | 220.0 |  | Green |  | Data Gathering |  |
| 20 | Kick-off Meeting | 2 | Completed | 1.0 | 2026-01-20 | 2026-01-20 | 2026-01-20 | 2026-01-20 | 0 | 0.0 |  | 229.9999999653 |  | Green |  | Data Gathering |  |
| 21 | Data gathering & pre-requisites complete. Ready for onsite workshop | 2 | Completed | 1.0 | 2026-02-02 | 2026-02-27 | 2026-02-02 | 2026-02-27 | 0 | 20.0 |  | 201.0 |  | Green |  | Data Gathering |  |
| 22 | Zycus BootCamp | 2 | Completed | 1.0 | 2026-01-27 | 2026-02-02 | 2026-01-27 | 2026-02-02 | 0 | 5.0 |  | 220.0 |  | Green |  | Data Gathering |  |
| 23 | Intake with iSupplier | 3 | Completed | 1.0 | 2026-01-27 | 2026-01-27 | 2026-01-27 | 2026-01-27 | 0 | 1.0 |  | 224.0 |  | Green |  | Data Gathering |  |
| 24 | iRisk | 3 | Completed | 1.0 | 2026-01-27 | 2026-01-27 | 2026-01-27 | 2026-01-27 | 0 | 1.0 |  | 224.0 |  | Green |  | Data Gathering |  |
| 25 | Intake with isource & ANA | 3 | Completed | 1.0 | 2026-01-28 | 2026-01-28 | 2026-01-28 | 2026-01-28 | 0 | 1.0 |  | 223.0 |  | Green |  | Data Gathering |  |
| 26 | Intake with iContract | 3 | Completed | 1.0 | 2026-02-02 | 2026-02-02 | 2026-02-02 | 2026-02-02 | 0 | 1.0 |  | 220.0 |  | Green |  | Data Gathering |  |
| 27 | Pre-design workshop session for integration | 2 | Completed | 1.0 | 2026-02-06 | 2026-02-20 | 2026-02-06 | 2026-02-20 | 0 | 11.0 |  | 206.0 |  | Green |  | Data Gathering |  |
| 28 | Pre design integration Sesion -isupplier | 3 | Completed | 1.0 | 2026-02-09 | 2026-02-10 | 2026-02-09 | 2026-02-10 | 0 | 2.0 |  | 214.0 |  | Green |  | Data Gathering |  |
| 29 | Pre design integration Sesion -users | 3 | Completed | 1.0 | 2026-02-13 | 2026-02-13 | 2026-02-13 | 2026-02-13 | 0 | 1.0 |  | 211.0 |  | Green |  | Data Gathering |  |
| 30 | Predesign integration session -iMaster | 3 | Completed | 1.0 | 2026-02-16 | 2026-02-16 | 2026-02-16 | 2026-02-16 | 0 | 1.0 |  | 210.0 |  | Green |  | Data Gathering |  |
| 31 | Sample data collection | 3 | Completed | 1.0 | 2026-02-06 | 2026-02-06 | 2026-02-06 | 2026-02-06 | 0 | 1.0 |  | 216.0 |  | Green |  | Data Gathering |  |
| 32 | Legacy data collection for supplier | 4 | Completed | 1.0 | 2026-02-06 | 2026-02-06 | 2026-02-06 | 2026-02-06 | 0 | 1.0 |  | 216.0 |  | Green |  | Data Gathering |  |
| 33 | Legacy data collection for PO | 4 | Completed | 1.0 | 2026-02-06 | 2026-02-06 | 2026-02-06 | 2026-02-06 | 0 | 1.0 |  | 216.0 |  | Green |  | Data Gathering |  |
| 34 | Legacy data collection for Contracts | 4 | Completed | 1.0 | 2026-02-06 | 2026-02-06 | 2026-02-06 | 2026-02-06 | 0 | 1.0 |  | 216.0 |  | Green |  | Data Gathering |  |
| 35 | System Setup Based on Samples | 3 | Completed | 1.0 | 2026-02-13 | 2026-02-20 | 2026-02-13 | 2026-02-20 | 0 | 6.0 |  | 206.0 |  | Green |  | Data Gathering |  |
| 36 | Configure system using collected sample data. | 4 | Completed | 1.0 | 2026-02-13 | 2026-02-20 | 2026-02-13 | 2026-02-20 | 0 | 6.0 |  | 206.0 |  | Green |  | Data Gathering |  |
| 37 | Configuration Documentation Workshop | 1 | Completed | 1.0 | 2026-02-03 | 2026-03-20 | 2026-02-03 | 2026-03-23 | 1 | 34.0 |  | 186.0 | abhilasha.s@zycus.com | Yellow | True | Requirement Workshop |  |
| 38 | Configuration Documentation Workshop- Functional | 2 | Completed | 1.0 | 2026-02-03 | 2026-02-20 | 2026-02-03 | 2026-03-13 | 15 | 14.0 |  | 206.0 | abhilasha.s@zycus.com | Green |  | Requirement Workshop |  |
| 39 | As-is Process walkthrough by Titan | 3 | Completed | 1.0 | 2026-02-03 | 2026-02-20 | 2026-02-03 | 2026-02-20 | 0 | 14.0 |  | 206.0 |  | Green |  | Requirement Workshop |  |
| 40 | iSupplier-As Is Process Discussion | 4 | Completed | 1.0 | 2026-02-03 | 2026-02-04 | 2026-02-03 | 2026-02-04 | 0 | 2.0 |  | 218.0 |  | Green |  | Requirement Workshop |  |
| 41 | iSource-As Is Process Discussion | 4 | Completed | 1.0 | 2026-02-13 | 2026-02-13 | 2026-02-13 | 2026-02-13 | 0 | 1.0 |  | 211.0 |  | Green |  | Requirement Workshop |  |
| 42 | iContract-As Is Process Discussion | 4 | Completed | 1.0 | 2026-02-17 | 2026-02-17 | 2026-02-17 | 2026-02-17 | 0 | 1.0 |  | 209.0 |  | Green |  | Requirement Workshop |  |
| 43 | iRequest-As Is Process Discussion | 4 | Completed | 1.0 | 2026-02-18 | 2026-02-18 | 2026-02-18 | 2026-02-18 | 0 | 1.0 |  | 208.0 |  | Green |  | Requirement Workshop |  |
| 44 | iRisk-As Is Process Discussion | 4 | Completed | 1.0 | 2026-02-19 | 2026-02-20 | 2026-02-19 | 2026-02-20 | 0 | 2.0 |  | 206.0 |  | Green |  | Requirement Workshop |  |
| 45 | Onsite- Design Session-Design Session Completion and Sign off | 2 | Completed | 1.0 | 2026-03-02 | 2026-03-20 | 2026-03-02 | 2026-03-13 | 7 | 15.0 |  | 186.0 | abhilasha.s@zycus.com | Green |  | Requirement Workshop |  |
| 46 | Workshop Kick-off & Introductions | 3 | Completed | 1.0 | 2026-03-02 | 2026-03-02 | 2026-03-02 | 2026-03-02 | 0 | 1.0 |  | 200.0 |  | Green |  | Requirement Workshop |  |
| 47 | iSupplier To-Be Process Design (Reg & Onboarding) | 3 | Completed | 1.0 | 2026-03-03 | 2026-03-03 | 2026-03-03 | 2026-03-03 | 0 | 1.0 |  | 199.0 |  | Green |  | Requirement Workshop |  |
| 48 | iSupplier To-Be Process Design (Data Mgmt & Perf) | 3 | Completed | 1.0 | 2026-03-04 | 2026-03-04 | 2026-03-04 | 2026-03-04 | 0 | 1.0 |  | 198.0 |  | Green |  | Requirement Workshop |  |
| 49 | iRisk-As Is Process Discussion | 3 | Completed | 1.0 | 2026-03-06 | 2026-03-06 | 2026-03-06 | 2026-03-06 | 0 | 1.0 |  | 196.0 |  | Green |  | Requirement Workshop |  |
| 50 | iSource-As Is Process Discussion & ANA functional Design and configuration Discussion | 3 | Completed | 1.0 | 2026-03-09 | 2026-03-09 | 2026-03-09 | 2026-03-09 | 0 | 1.0 |  | 195.0 |  | Green |  | Requirement Workshop |  |
| 51 | iContract-As Is Process Discussion & Intake with iContract functional Design and configuration | 3 | Completed | 1.0 | 2026-03-10 | 2026-03-10 | 2026-03-10 | 2026-03-10 | 0 | 1.0 |  | 194.0 |  | Green |  | Requirement Workshop |  |
| 52 | iRequest-As Is Process Discussion | 3 | Completed | 1.0 | 2026-03-11 | 2026-03-11 | 2026-03-11 | 2026-03-11 | 0 | 1.0 |  | 193.0 |  | Green |  | Requirement Workshop |  |
| 53 | Consolidated review of proposed solution and "To-Be" design. | 3 | Completed | 1.0 | 2026-03-12 | 2026-03-12 | 2026-03-12 | 2026-03-12 | 0 | 1.0 |  | 192.0 | abhilasha.s@zycus.com | Green |  | Requirement Workshop |  |
| 54 | Review Risks, Assumptions, Issues, and Dependencies (RAID log),Next Steps | 3 | Completed | 1.0 | 2026-03-12 | 2026-03-12 | 2026-03-12 | 2026-03-12 | 0 | 1.0 |  | 192.0 | abhilasha.s@zycus.com | Green |  | Requirement Workshop |  |
| 55 | Legacy Migration Discussion and Approach | 3 | Completed | 1.0 | 2026-03-13 | 2026-03-13 | 2026-03-13 | 2026-03-13 | 0 | 1.0 |  | 191.0 | abhilasha.s@zycus.com | Green |  | Requirement Workshop |  |
| 56 | Go Value discussion & Project Plan | 3 | Completed | 1.0 | 2026-03-13 | 2026-03-20 | 2026-03-13 | 2026-03-13 | -5 | 6.0 |  | 186.0 | abhilasha.s@zycus.com | Yellow |  | Requirement Workshop |  |
| 57 | Draft IAD discussion & Sign off | 3 | Completed | 1.0 | 2026-03-12 | 2026-03-20 | 2026-03-12 | 2026-03-12 | -6 | 7.0 |  | 186.0 | abhilasha.s@zycus.com | Green |  | Requirement Workshop |  |
| 58 | Integration Configuration Documentation Workshop | 2 | Completed | 1.0 | 2026-03-04 | 2026-03-05 | 2026-03-04 | 2026-03-05 | 0 | 2.0 |  | 197.0 | Titan IT Project Manager, Titan Integration Team, Titan Project Manager, Zycus Integration Team, Zycus Project Manager | Green |  | Requirement Workshop |  |
| 59 | iSupplier outbound | 3 | Unknown | 1.0 | 2026-03-04 | 2026-03-05 | 2026-03-04 | 2026-03-05 | 0 | 2.0 |  | 197.0 |  | Yellow |  | Requirement Workshop | True |
| 60 | iSupplier Integration Overview | 4 | Unknown | 1.0 | 2026-03-04 | 2026-03-04 | 2026-03-04 | 2026-03-04 | 0 | 1.0 |  | 198.0 |  | Green |  | Requirement Workshop | True |
| 61 | iSupplier Integration Scenarios and Mapping | 4 | Unknown | 1.0 | 2026-03-04 | 2026-03-04 | 2026-03-04 | 2026-03-04 | 0 | 1.0 |  | 198.0 |  | Green |  | Requirement Workshop | True |
| 62 | iSupplier Integration Mapping discussions | 4 | Unknown | 1.0 | 2026-03-04 | 2026-03-04 | 2026-03-04 | 2026-03-04 | 0 | 1.0 |  | 198.0 |  | Green |  | Requirement Workshop | True |
| 63 | iSupplier end to end integration flow | 4 | Unknown | 1.0 | 2026-03-04 | 2026-03-04 | 2026-03-04 | 2026-03-04 | 0 | 1.0 |  | 198.0 |  | Red |  | Requirement Workshop | True |
| 64 | iSupplier TDD review | 4 | Unknown | 1.0 | 2026-03-05 | 2026-03-05 | 2026-03-05 | 2026-03-05 | 0 | 1.0 |  | 197.0 |  | Yellow |  | Requirement Workshop | True |
| 65 | Working integrations demo for iSupplier & / Overall integration summary and next steps discussion | 4 | Unknown | 1.0 | 2026-03-05 | 2026-03-05 | 2026-03-05 | 2026-03-05 | 0 | 1.0 |  | 197.0 | Vinayaka Soratoor | Red |  | Requirement Workshop | True |
| 66 | Configuration Documentation Consolidation (offsite) | 2 | Completed | 1.0 | 2026-03-09 | 2026-03-20 | 2026-02-27 | 2026-03-23 | 1 | 10.0 |  | 186.0 |  | Yellow |  | Requirement Workshop |  |
| 67 | De-briefing session with internal Zycus Stakeholders | 3 | Completed | 1.0 | 2026-03-09 | 2026-03-09 | 2026-03-09 | 2026-03-09 | 0 | 1.0 |  | 195.0 | Titan Core Project Team, Titan Project Manager, Zycus Project Manager, Zycus Project Team | Green |  | Requirement Workshop |  |
| 68 | S2C Configuration Documentation consolidation | 3 | Completed | 1.0 | 2026-03-18 | 2026-03-20 | 2026-03-09 | 2026-03-13 | -5 | 3.0 |  | 186.0 |  | Yellow |  | Requirement Workshop |  |
| 69 | Develop & Publish 1st draft of Implementation Approach Document (IAD) for iSupplier | 4 | Completed | 1.0 | 2026-03-18 | 2026-03-18 |  |  |  | 1.0 |  | 188.0 | shivani.mishra@zycus.com | Green |  | Requirement Workshop |  |
| 70 | iSupplier IAD Review and Sign off by Titan | 4 | Completed | 1.0 | 2026-03-19 | 2026-03-20 |  |  |  | 2.0 |  | 186.0 | courtney.re@Titan.com | Yellow |  | Requirement Workshop |  |
| 71 | Develop & Publish 1st draft of Implementation Approach Document (IAD) for iRequest | 4 | Completed | 1.0 | 2026-03-18 | 2026-03-18 | 2026-03-09 | 2026-03-09 | -7 | 1.0 |  | 188.0 | Zycus Consultant | Green |  | Requirement Workshop |  |

| row_number | name | level | status | percent_complete | start_date | end_date | baseline_start | baseline_finish | variance_days | duration_days | total_float | assigned_to | rag_raw | is_milestone_or_phase | phase_name |
| --- | --- | --- | --- | --- | --- | --- | --- | --- | --- | --- | --- | --- | --- | --- | --- |
| 72 | iRequest IAD Review and Sign off by Titan | 4 | Completed | 1.0 | 2026-03-19 | 2026-03-20 | 2026-03-10 | 2026-03-11 | -7 | 2.0 | 186.0 | Titan Project Manager | Red |  | Requirement Workshop |
| 73 | Develop & Publish 1st draft of Implementation Approach Document (IAD) for iSource | 4 | Completed | 1.0 | 2026-03-18 | 2026-03-18 | 2026-03-09 | 2026-03-09 | -7 | 1.0 | 188.0 | Zycus Consultant | Green |  | Requirement Workshop |
| 74 | iSource IAD Review and Sign off by Titan | 4 | Completed | 1.0 | 2026-03-19 | 2026-03-20 | 2026-03-10 | 2026-03-12 | -6 | 2.0 | 186.0 | Titan Project Manager | Red |  | Requirement Workshop |
| 75 | Develop & Publish 1st draft of Implementation Approach Document (IAD) for iContract | 4 | Completed | 1.0 | 2026-03-18 | 2026-03-18 | 2026-03-09 | 2026-03-09 | -7 | 1.0 | 188.0 | Zycus Consultant | Green |  | Requirement Workshop |
| 76 | iContract IAD Review and Sign off by Titan | 4 | Completed | 1.0 | 2026-03-19 | 2026-03-20 | 2026-03-10 | 2026-03-13 | -5 | 2.0 | 186.0 | Titan Project Manager | Red |  | Requirement Workshop |
| 77 | Develop & Publish 1st draft of Implementation Approach Document (IAD) for iRisk | 4 | Completed | 1.0 | 2026-03-18 | 2026-03-18 | 2026-03-09 | 2026-03-09 | -7 | 1.0 | 188.0 | Zycus Consultant | Green |  | Requirement Workshop |
| 78 | iRisk IAD Review and Sign off by Titan | 4 | Completed | 1.0 | 2026-03-19 | 2026-03-20 | 2026-03-10 | 2026-03-13 | -5 | 2.0 | 186.0 | Titan Project Manager | Red |  | Requirement Workshop |
| 79 | Integration Configuration Documentation Consolidation | 2 | Completed | 1.0 | 2026-03-18 | 2026-03-20 | 2026-03-05 | 2026-03-10 | -8 | 3.0 | 186.0 |  | Yellow |  | Requirement Workshop |
| 80 | Develop & Publish High Level Design Document TDD with Titan | 3 | Completed | 1.0 | 2026-03-18 | 2026-03-19 | 2026-03-05 | 2026-03-10 | -7 | 2.0 | 187.0 | Zycus Integration Lead | Green |  | Requirement Workshop |
| 81 | Titan to provide sign off on TDD indicating final requirements | 3 | Completed | 1.0 | 2026-03-20 | 2026-03-20 | 2026-03-05 | 2026-03-05 | -11 | 1.0 | 186.0 | Titan Integration Team | Yellow |  | Requirement Workshop |
| 82 | Functional Design Sign Off | 2 | Completed | 1.0 | 2026-03-20 | 2026-03-20 |  |  |  | 0.0 | 186.9999999653 |  | Yellow |  | Requirement Workshop |
| 83 | Configuration and Build phase | 1 | In Progress | 0.98 | 2026-01-28 | 2026-05-19 | 2026-03-05 | 2026-03-19 | -32 | 80.0 | 144.0 |  | Yellow | True | Build |
| 84 | Functional Confuguration on Staging System/ Setup | 2 | In Progress | 0.93 | 2026-03-17 | 2026-04-20 | 2026-03-05 | 2026-03-19 | -22 | 25.0 | 165.0 |  | Yellow |  | Build |
| 85 | Update configurations based as per IAD (Solution Design) using agreed Commodity, Division Tree & Project Stages | 3 | In Progress | 0.93 | 2026-03-17 | 2026-04-20 | 2026-03-11 | 2026-03-16 | -12 | 25.0 | 165.0 |  | Green |  | Build |
| 86 | iRequest | 4 | Completed | 1.0 | 2026-03-23 | 2026-04-01 |  |  |  | 8.0 | 178.0 |  |  |  | Build |
| 87 | Request type and Request Definition configuration / updates | 5 | Completed | 1.0 | 2026-03-23 | 2026-03-23 | 2026-03-11 | 2026-03-11 | -8 | 1.0 | 185.0 | sagar.chaurasiya@zycus.com | Green |  | Build |
| 88 | Review of configured Request forms and provide feedback | 5 | Completed | 1.0 | 2026-03-24 | 2026-03-24 | 2026-03-11 | 2026-03-11 | -9 | 1.0 | 184.0 | sagar.chaurasiya@zycus.com | Green |  | Build |
| 89 | Zycus to update configurations of Request forms as per received feedback | 5 | Completed | 1.0 | 2026-03-25 | 2026-03-25 | 2026-03-11 | 2026-03-11 | -10 | 1.0 | 183.0 | sagar.chaurasiya@zycus.com | Green |  | Build |
| 90 | Review of configured Request forms and provide confirmation | 5 | Completed | 1.0 | 2026-03-26 | 2026-03-26 | 2026-03-11 | 2026-03-11 | -11 | 1.0 | 182.0 | courtney.re@Titan.com | Yellow |  | Build |
| 91 | User Roles configuration | 5 | Completed | 1.0 | 2026-03-24 | 2026-03-24 | 2026-03-11 | 2026-03-11 | -9 | 1.0 | 184.0 | sagar.chaurasiya@zycus.com | Green |  | Build |
| 92 | Approval workflow configuration | 5 | Completed | 1.0 | 2026-03-24 | 2026-03-24 | 2026-03-11 | 2026-03-11 | -9 | 1.0 | 184.0 | sagar.chaurasiya@zycus.com | Green |  | Build |
| 93 | Review of User Roles and Approval Workflow and provide feedback | 5 | Completed | 1.0 | 2026-03-25 | 2026-03-25 | 2026-03-11 | 2026-03-11 | -10 | 1.0 | 183.0 | courtney.re@Titan.com | Green |  | Build |
| 94 | Zycus to update configurations for user roles and approval workflow as per received feedback | 5 | Completed | 1.0 | 2026-03-26 | 2026-03-26 | 2026-03-11 | 2026-03-11 | -11 | 1.0 | 182.0 | sagar.chaurasiya@zycus.com | Green |  | Build |
| 95 | Review of User Roles and Approval Workflow and provide confirmation | 5 | Completed | 1.0 | 2026-03-27 | 2026-03-27 | 2026-03-11 | 2026-03-11 | -12 | 1.0 | 181.0 | courtney.re@Titan.com | Green |  | Build |
| 96 | Admin settings configuration | 5 | Completed | 1.0 | 2026-03-30 | 2026-03-31 | 2026-03-13 | 2026-03-16 | -11 | 2.0 | 179.0 | Zycus Product Specialist | Green |  | Build |
| 97 | Readiness for Pre-UAT | 5 | Completed | 1.0 | 2026-04-01 | 2026-04-01 |  |  |  | 1.0 | 178.0 | abhilasha.s@zycus.com | Green |  | Build |
| 98 | iRisk Management | 4 | Completed | 1.0 | 2026-03-23 | 2026-04-03 | 2026-03-09 | 2026-03-09 | -19 | 10.0 | 176.0 |  | Yellow |  | Build |
| 99 | Conclude Functional Configuration | 5 | Completed | 1.0 | 2026-03-23 | 2026-03-23 | 2026-03-09 | 2026-03-09 | -10 | 1.0 | 185.0 | sagar.chaurasiya@zycus.com | Yellow |  | Build |
| 100 | Configure KPI, Scorecards and Reports in iRisk pre PRODUCTION environment | 5 | Completed | 1.0 | 2026-03-23 | 2026-03-23 | 2026-03-09 | 2026-03-09 | -10 | 1.0 | 185.0 | sagar.chaurasiya@zycus.com | Green |  | Build |
| 101 | Share Supplier Bulk upload template by Zycus | 5 | Completed | 1.0 | 2026-03-24 | 2026-03-24 | 2026-03-09 | 2026-03-09 | -11 | 1.0 | 184.0 | sagar.chaurasiya@zycus.com | Green |  | Build |
| 102 | Run a mock event to verify the results | 5 | Completed | 1.0 | 2026-03-25 | 2026-03-25 | 2026-03-09 | 2026-03-09 | -12 | 1.0 | 183.0 | sagar.chaurasiya@zycus.com | Red |  | Build |
| 103 | Configuration for SCAR & Development program on STAGING | 5 | Completed | 1.0 | 2026-03-25 | 2026-03-25 | 2026-03-09 | 2026-03-09 | -12 | 1.0 | 183.0 | sagar.chaurasiya@zycus.com | Green |  | Build |
| 104 | Approval workflow configuration | 5 | Completed | 1.0 | 2026-03-26 | 2026-03-26 | 2026-03-09 | 2026-03-09 | -13 | 1.0 | 182.0 | sagar.chaurasiya@zycus.com | Green |  | Build |
| 105 | Review cycles of entire iRisk process flow with the Titan | 5 | Completed | 1.0 | 2026-03-27 | 2026-03-27 | 2026-03-09 | 2026-03-09 | -14 | 1.0 | 181.0 | sagar.chaurasiya@zycus.com | Red |  | Build |
| 106 | Titan to provide feedback | 5 | Completed | 1.0 | 2026-03-30 | 2026-03-30 | 2026-03-09 | 2026-03-09 | -15 | 1.0 | 180.0 | sagar.chaurasiya@zycus.com | Red |  | Build |
| 107 | Zycus to incorporate the feedback | 5 | Completed | 1.0 | 2026-03-31 | 2026-03-31 | 2026-03-09 | 2026-03-09 | -16 | 1.0 | 179.0 | sagar.chaurasiya@zycus.com | Red |  | Build |
| 108 | Titan to review and approve STAGING configuration | 5 | Completed | 1.0 | 2026-04-01 | 2026-04-01 | 2026-03-09 | 2026-03-09 | -17 | 1.0 | 178.0 | courtney.re@Titan.com | Red |  | Build |
| 109 | Provide final list of users with specified roles | 5 | Completed | 1.0 | 2026-04-02 | 2026-04-02 | 2026-03-09 | 2026-03-09 | -18 | 1.0 | 177.0 | Titan Core Project Team | Green |  | Build |
| 110 | Readiness for Pre-UAT | 5 | Completed | 1.0 | 2026-04-03 | 2026-04-03 | 2026-03-09 | 2026-03-09 | -19 | 1.0 | 176.0 |  | Red |  | Build |
| 111 | iSource Management | 4 | Completed | 1.0 | 2026-03-23 | 2026-04-03 | 2026-03-06 | 2026-03-06 | -20 | 10.0 | 176.0 |  | Yellow |  | Build |
| 112 | iSource: Conclude Functional Configuration | 5 | Completed | 1.0 | 2026-03-23 | 2026-03-23 | 2026-03-06 | 2026-03-06 | -11 | 1.0 | 185.0 |  | Green |  | Build |
| 113 | Functional Configuration on STAGING set Up | 5 | Completed | 1.0 | 2026-03-24 | 2026-03-24 | 2026-03-06 | 2026-03-06 | -12 | 1.0 | 184.0 |  | Green |  | Build |
| 114 | Configure Fields structures as per finalized UI template on STAGING environment | 5 | Completed | 1.0 | 2026-03-25 | 2026-03-25 | 2026-03-06 | 2026-03-06 | -13 | 1.0 | 183.0 | Zycus Product Specialist | Green |  | Build |
| 115 | Workflow configuration on STAGING | 5 | Completed | 1.0 | 2026-03-26 | 2026-03-26 | 2026-03-06 | 2026-03-06 | -14 | 1.0 | 182.0 | Zycus Product Specialist | Green |  | Build |
| 116 | Template Configuration on STAGING | 5 | Completed | 1.0 | 2026-03-27 | 2026-03-27 | 2026-03-06 | 2026-03-06 | -15 | 1.0 | 181.0 | Zycus Product Specialist | Green |  | Build |
| 117 | Review cycles of entire Sourcing process flow with the Titan | 5 | Completed | 1.0 | 2026-03-30 | 2026-03-30 | 2026-03-06 | 2026-03-06 | -16 | 1.0 | 180.0 | Zycus Product Specialist | Yellow |  | Build |
| 118 | Titan to provide feedback | 5 | Completed | 1.0 | 2026-03-31 | 2026-03-31 | 2026-03-06 | 2026-03-06 | -17 | 1.0 | 179.0 | Zycus Product Specialist | Red |  | Build |
| 119 | Zycus to incorporate feedback | 5 | Completed | 1.0 | 2026-04-02 | 2026-04-03 | 2026-03-06 | 2026-03-06 | -18 | 2.0 | 176.0 | Zycus Product Specialist | Red |  | Build |
| 120 | Titan to review and approve STAGING configuration | 6 | Completed | 1.0 | 2026-04-02 | 2026-04-03 | 2026-03-06 | 2026-03-06 | -20 | 2.0 | 176.0 | Titan Project Manager | Red |  | Build |
| 121 | Provide final list of users with specified roles | 7 | Completed | 1.0 | 2026-04-02 | 2026-04-02 | 2026-03-06 | 2026-03-06 | -19 | 1.0 | 177.0 | Titan Core Project Team | Green |  | Build |
| 122 | Pre UAT preparedness | 7 | Completed | 1.0 | 2026-04-03 | 2026-04-03 | 2026-03-06 | 2026-03-06 | -20 | 1.0 | 176.0 | Zycus Product Specialist | Yellow |  | Build |
| 123 | Contract Management with Integration and Merlin | 4 | Completed | 1.0 | 2026-03-23 | 2026-04-01 | 2026-03-10 | 2026-03-10 | -16 | 8.0 | 178.0 |  | Yellow |  | Build |
| 124 | Configure Fields structures as per finalized UI template on STAGING environment | 5 | Completed | 1.0 | 2026-03-23 | 2026-03-23 | 2026-03-10 | 2026-03-10 | -9 | 1.0 | 185.0 | Zycus Product Specialist | Yellow |  | Build |
| 125 | Workflow configuration on STAGING | 5 | Completed | 1.0 | 2026-03-24 | 2026-03-24 | 2026-03-10 | 2026-03-10 | -10 | 1.0 | 184.0 | Zycus Product Specialist | Yellow |  | Build |
| 126 | Template/Folder Configuration on STAGING | 5 | Completed | 1.0 | 2026-03-25 | 2026-03-25 | 2026-03-10 | 2026-03-10 | -11 | 1.0 | 183.0 | Zycus Product Specialist | Yellow |  | Build |
| 127 | Provide access to required users on STAGING setup for Pre UAT | 5 | Completed | 1.0 | 2026-03-26 | 2026-03-26 | 2026-03-10 | 2026-03-10 | -12 | 1.0 | 182.0 | Zycus Product Specialist | Yellow |  | Build |
| 128 | Review cycles of entire Contracting process flow with the Titan and Titan to provide feedback - if any | 5 | Completed | 1.0 | 2026-03-27 | 2026-03-27 | 2026-03-10 | 2026-03-10 | -13 | 1.0 | 181.0 | Titan Project Team, Zycus Product Specialist | Yellow |  | Build |
| 129 | Zycus to incorporate feedback - as applicable | 5 | Completed | 1.0 | 2026-03-30 | 2026-03-30 | 2026-03-10 | 2026-03-10 | -14 | 1.0 | 180.0 | Zycus Product Specialist | Yellow |  | Build |
| 130 | Titan to review updated configurations and approve STAGING configuration | 5 | Completed | 1.0 | 2026-03-31 | 2026-03-31 | 2026-03-10 | 2026-03-10 | -15 | 1.0 | 179.0 | Zycus Product Specialist | Yellow |  | Build |
| 131 | Contract Management with Integration and Merlin | 5 | Completed | 1.0 |  |  |  |  |  |  |  |  | Yellow |  | Build |
| 132 | Provide final list of users with specified roles | 5 | Completed | 1.0 | 2026-04-01 | 2026-04-01 | 2026-03-10 | 2026-03-10 | -16 | 1.0 | 178.0 | Titan Core Project Team | Yellow |  | Build |
| 133 | Supplier Information Management with Integration | 4 | In Progress | 0.82 | 2026-03-17 | 2026-04-20 | 2026-03-05 | 2026-03-05 | -32 | 25.0 | 165.0 |  | Yellow |  | Build |
| 134 | Common Master | 5 | Completed | 1.0 | 2026-03-19 | 2026-03-20 |  |  |  | 2.0 | 186.0 |  | Yellow |  | Build |
| 135 | iSupplier Deployment | 5 | In Progress | 0.81 | 2026-03-17 | 2026-04-20 | 2026-03-05 | 2026-03-05 | -32 | 25.0 | 165.0 |  | Red |  | Build |
| 136 | Repo Sample Supplier Upload on STAGING for iSource/iContract/iRisk | 6 | In Progress | 0.81 | 2026-03-17 | 2026-04-20 | 2026-03-05 | 2026-03-05 | -32 | 25.0 | 165.0 |  | Green |  | Build |
| 137 | Titan to provide sample 100 suppliers for STAGING as per REPO bulk upload template (For iContract/iSource/iRisk) | 7 | Completed | 1.0 | 2026-03-17 | 2026-03-17 | 2026-03-05 | 2026-03-05 | -8 | 1.0 | 189.0 | courtney.re@Titan.com | Green |  | Build |
| 138 | Zycus to bulk upload sample supplier data on STAGING in Repo fields | 7 | Completed | 1.0 | 2026-03-18 | 2026-03-18 | 2026-03-05 | 2026-03-05 | -9 | 1.0 | 188.0 | sagar.chaurasiya@zycus.com | Yellow |  | Build |
| 139 | Design & Development on STAGING Set UP | 7 | In Progress | 0.79 | 2026-03-19 | 2026-04-20 | 2026-03-05 | 2026-03-05 | -32 | 23.0 | 165.0 |  | Yellow |  | Build |
| 140 | Zycus to Configure UI based on the feedback on Metadata template | 8 | Completed | 1.0 | 2026-03-19 | 2026-03-19 | 2026-03-05 | 2026-03-05 | -10 | 1.0 | 187.0 | sagar.chaurasiya@zycus.com | Green |  | Build |
| 141 | Supplier workflow configuration for Create, Edit, Activate & Deactivate | 8 | Completed | 1.0 | 2026-03-20 | 2026-03-20 |  |  |  | 1.0 | 186.0 | sagar.chaurasiya@zycus.com | Green |  | Build |

| row_number | name | level | status | percent_complete | start_date | end_date | baseline_start | baseline_finish | variance_days | duration_days | total_float | assigned_to | rag_raw | is_milestone_or_phase | phase_name | on_hold | at_risk |
| --- | --- | --- | --- | --- | --- | --- | --- | --- | --- | --- | --- | --- | --- | --- | --- | --- | --- |
| 142 | iSupplier reference Master | 8 | Completed | 1.0 | 2026-03-19 | 2026-03-19 |  |  |  | 1.0 | 187.0 | sagar.chaurasiya@zycus.com | Green |  | Build |  |  |
| 143 | facility System Setup | 8 | Completed | 1.0 | 2026-03-19 | 2026-03-19 |  |  |  | 1.0 | 187.0 | sagar.chaurasiya@zycus.com | Green |  | Build |  |  |
| 144 | Supplier Notification template | 8 | On Hold | 0.0 | 2026-03-26 | 2026-03-26 |  |  |  | 1.0 | 182.0 | courtney.re@Titan.com | Red |  | Build | True | True |
| 145 | OTK to share D&B creds | 8 | On Hold | 0.0 | 2026-03-19 | 2026-03-19 |  |  |  | 1.0 | 187.0 | courtney.re@Titan.com | Red |  | Build | True |  |
| 146 | Enable D & B App | 8 | On Hold | 0.0 | 2026-03-24 | 2026-03-24 |  |  |  | 1.0 | 184.0 | sagar.chaurasiya@zycus.com | Yellow |  | Build | True |  |
| 147 | OTK to share API details for ISN | 8 | Completed | 1.0 | 2026-03-19 | 2026-03-19 |  |  |  | 1.0 | 187.0 | courtney.re@Titan.com | Green |  | Build |  |  |
| 148 | Zycus to Check ISN custom configuration/ App | 8 | Completed | 1.0 | 2026-03-27 | 2026-03-27 |  |  |  | 1.0 | 181.0 |  | Yellow |  | Build |  |  |
| 149 | Setup ISN integration | 8 | Completed | 1.0 | 2026-04-20 | 2026-04-20 |  |  |  | 1.0 | 165.0 |  | Red |  | Build |  |  |
| 150 | ISupplier Demo without ISN integration | 8 | Completed | 1.0 | 2026-03-27 | 2026-03-27 |  |  |  | 1.0 | 181.0 |  | Red |  | Build |  |  |
| 151 | Feedback for iSupplier walkthrough | 8 | Completed | 1.0 | 2026-03-30 | 2026-03-30 |  |  |  | 1.0 | 180.0 |  | Red |  | Build |  |  |
| 152 | iSupplier feedback inforporation & re-demo | 8 | Completed | 1.0 | 2026-04-02 | 2026-04-02 |  |  |  | 1.0 | 177.0 |  | Red |  | Build |  |  |
| 153 | Pre UAT readiness | 8 | Completed | 1.0 | 2026-04-03 | 2026-04-03 |  |  |  | 1.0 | 176.0 | abhilasha.s@zycus.com | Red |  | Build |  |  |
| 154 | Single Sign On | 2 | Completed | 1.0 | 2026-01-28 | 2026-02-05 | 2026-01-27 | 2026-02-27 | 16 | 7.0 | 217.0 |  | Green |  | Build |  |  |
| 155 | Availability of Technical Team from Titan | 3 | Completed | 1.0 | 2026-01-28 | 2026-01-30 | 2026-01-27 | 2026-01-27 | 0 | 3.0 | 221.0 | Titan Project Manager | Green |  | Build |  |  |
| 156 | Zycus to share Process flow of SSO integration | 3 | Completed | 1.0 | 2026-01-28 | 2026-01-28 | 2026-01-28 | 2026-01-28 | 0 | 1.0 | 223.0 | Zycus SSO Team | Green |  | Build |  |  |
| 157 | Exchange of configuration files | 3 | Completed | 1.0 | 2026-01-29 | 2026-01-29 | 2026-01-29 | 2026-01-29 | 0 | 1.0 | 222.0 | Titan IT Team, Zycus SSO Team | Green |  | Build |  |  |
| 158 | Exchange of certificates to be used | 3 | Completed | 1.0 | 2026-01-29 | 2026-01-29 | 2026-01-29 | 2026-01-29 | 0 | 1.0 | 222.0 | Titan IT Team, Zycus SSO Team | Green |  | Build |  |  |
| 159 | Approach to be used for Single Sign On [Claims/Email Address etc.] | 3 | Completed | 1.0 | 2026-01-30 | 2026-01-30 | 2026-01-30 | 2026-01-30 | 0 | 1.0 | 221.0 | Titan IT Team, Zycus SSO Team | Green |  | Build |  |  |
| 160 | Configuration and Review | 3 | Completed | 1.0 | 2026-02-02 | 2026-02-05 | 2026-02-02 | 2026-02-05 | 0 | 4.0 | 217.0 |  | Green |  | Build |  |  |
| 161 | Registration of Service Provider URL for client | 4 | Completed | 1.0 | 2026-02-02 | 2026-02-02 | 2026-02-02 | 2026-02-02 | 0 | 1.0 | 220.0 | Zycus SSO Team | Green |  | Build |  |  |
| 162 | Registration TMS URL specific to client | 4 | Completed | 1.0 | 2026-02-02 | 2026-02-02 | 2026-02-02 | 2026-02-02 | 0 | 1.0 | 220.0 | Zycus SSO Team | Green |  | Build |  |  |
| 163 | Configuration of Web Server for service Provider application | 4 | Completed | 1.0 | 2026-02-03 | 2026-02-03 | 2026-02-03 | 2026-02-03 | 0 | 1.0 | 219.0 | Zycus SSO Team | Green |  | Build |  |  |
| 164 | Service Provider application deployment for client and sanity of the deployed setup | 4 | Completed | 1.0 | 2026-02-03 | 2026-02-03 | 2026-02-03 | 2026-02-03 | 0 | 1.0 | 219.0 | Zycus SSO Team | Green |  | Build |  |  |
| 165 | Configuration of Service Provider setup using below mentioned files | 4 | Completed | 1.0 | 2026-02-03 | 2026-02-03 | 2026-02-03 | 2026-02-03 | 0 | 1.0 | 219.0 | Zycus SSO Team | Green |  | Build |  |  |
| 166 | Issue Resolution, if any | 4 | Completed | 1.0 | 2026-02-04 | 2026-02-05 | 2026-02-04 | 2026-02-05 | 0 | 2.0 | 217.0 | Zycus SSO Team | Green |  | Build |  |  |
| 167 | Sign off of SSO on STAGING Environment | 4 | Completed | 1.0 | 2026-02-05 | 2026-02-05 | 2026-02-05 | 2026-02-05 | 0 | 1.0 | 217.0 | Titan IT Team | Green |  | Build |  |  |
| 168 | Integration Build & SIT | 2 | Completed | 1.0 | 2026-03-23 | 2026-05-19 |  |  |  | 42.0 | 144.0 |  | Yellow |  | Build |  |  |
| 169 | Systems Integration on STAGING Set UP | 3 | Completed | 1.0 | 2026-03-23 | 2026-04-14 | 2026-02-24 | 2026-04-17 | 3 | 17.0 | 169.0 |  | Yellow |  | Build |  |  |
| 170 | Integration set up, Development at Zycus | 4 | Completed | 1.0 | 2026-03-23 | 2026-03-30 | 2026-03-06 | 2026-03-13 | -11 | 6.0 | 180.0 | Zycus Integration Team | Green |  | Build |  |  |
| 171 | Integration set up, Development at Titan | 4 | Completed | 1.0 | 2026-03-23 | 2026-04-08 | 2026-03-09 | 2026-03-27 | -8 | 13.0 | 173.0 | Titan Integration Team | Yellow |  | Build |  |  |
| 172 | Integration Unit Testing and Feedback Incorporation | 4 | Completed | 1.0 | 2026-04-09 | 2026-04-14 | 2026-04-13 | 2026-04-16 | 2 | 4.0 | 169.0 | Titan Integration Team, Zycus Integration Team | Red |  | Build |  |  |
| 173 | Systems Integration Testing | 3 | Completed | 1.0 | 2026-04-15 | 2026-05-19 | 2026-03-30 | 2026-04-17 | -11 | 25.0 | 144.0 |  | Red |  | Build |  |  |
| 174 | SIT on STAGING Set Up | 4 | Completed | 1.0 | 2026-04-15 | 2026-05-19 | 2026-03-30 | 2026-04-17 | -11 | 25.0 | 144.0 | Titan Integration Team, Zycus Integration Specialist | Red |  | Build |  |  |
| 175 | Sign off on SIT | 5 | Completed | 1.0 | 2026-04-15 | 2026-05-19 | 2026-03-30 | 2026-04-17 | -11 | 25.0 | 144.0 | Titan IT Project Manager | Red |  | Build |  |  |
| 176 | Pre UAT | 2 | Completed | 1.0 | 2026-04-02 | 2026-05-07 | 2026-03-09 | 2026-04-17 | -14 | 26.0 | 152.0 |  | Yellow | True | Pre UAT |  |  |
| 177 | iRequest -Prepare for UAT | 3 | Completed | 1.0 | 2026-04-02 | 2026-04-13 | 2026-03-27 | 2026-04-17 | 4 | 7.5 | 170.5 |  | Yellow |  | Pre UAT |  |  |
| 178 | Pre-UAT - Provide End to end walkthrough of configured iRequest to Titan | 4 | Completed | 1.0 | 2026-04-02 | 2026-04-02 | 2026-03-27 | 2026-04-17 | 11 | 1.0 | 177.0 |  | Green |  | Pre UAT |  |  |
| 179 | Provide feedback - if any for iRequest configuration | 4 | Completed | 1.0 | 2026-04-03 | 2026-04-03 | 2026-03-27 | 2026-04-17 | 10 | 1.0 | 176.0 |  | Red |  | Pre UAT |  |  |
| 180 | Zycus to incorporate feedback - as applicable and share final version of Implementation Approach Document [IAD] | 4 | Completed | 1.0 | 2026-04-06 | 2026-04-06 | 2026-03-27 | 2026-04-17 | 9 | 1.0 | 175.0 |  | Red |  | Pre UAT |  |  |
| 181 | Sign off on Pre-UAT and final version of IAD | 4 | Completed | 1.0 | 2026-04-07 | 2026-04-07 | 2026-03-27 | 2026-04-17 | 8 | 1.0 | 174.0 |  | Red |  | Pre UAT |  |  |
| 182 | Logistics readiness if needed | 4 | Completed | 1.0 | 2026-04-07 | 2026-04-07 | 2026-03-27 | 2026-04-17 | 8 | 0.0 | 174.9999999653 |  | Red |  | Pre UAT |  |  |
| 183 | Create users on STAGING set for UAT group | 4 | Completed | 1.0 | 2026-04-08 | 2026-04-08 | 2026-03-27 | 2026-04-17 | 7 | 1.0 | 173.0 |  | Red |  | Pre UAT |  |  |
| 184 | Quality Reviews | 4 | Completed | 1.0 | 2026-04-09 | 2026-04-09 | 2026-03-27 | 2026-04-17 | 6 | 0.5 | 172.5 |  | Red |  | Pre UAT |  |  |
| 185 | Schedule for quality check | 4 | Completed | 1.0 | 2026-04-09 | 2026-04-09 | 2026-03-27 | 2026-04-17 | 6 | 0.5 | 172.5 |  | Red |  | Pre UAT |  |  |
| 186 | Perform quality checks, PSRs as per quality checklist and submit to QC team | 4 | Completed | 1.0 | 2026-04-10 | 2026-04-10 | 2026-03-27 | 2026-04-17 | 5 | 0.5 | 171.5 |  | Red |  | Pre UAT |  |  |
| 187 | Quality Check by Zycus QC team | 4 | Completed | 1.0 | 2026-04-10 | 2026-04-10 | 2026-03-27 | 2026-04-17 | 5 | 0.5 | 171.5 |  | Red |  | Pre UAT |  |  |
| 188 | Release of iRequest STAGING to Titan key users (UAT Release) | 4 | Completed | 1.0 | 2026-04-13 | 2026-04-13 | 2026-03-27 | 2026-04-17 | 4 | 0.5 | 170.5 |  | Red |  | Pre UAT |  |  |
| 189 | Create users and assign roles on STAGING set for UAT group | 4 | Completed | 1.0 | 2026-04-13 | 2026-04-13 | 2026-03-27 | 2026-04-17 | 4 | 0.5 | 170.5 |  | Red |  | Pre UAT |  |  |
| 190 | iRisk -Prepare for UAT | 3 | Completed | 1.0 | 2026-04-06 | 2026-04-09 | 2026-03-10 | 2026-03-10 | -22 | 4.0 | 172.0 | Zycus Product Specialist | Yellow |  | Pre UAT |  |  |
| 191 | Pre-UAT | 4 | Completed | 1.0 | 2026-04-06 | 2026-04-09 | 2026-03-10 | 2026-03-10 | -22 | 4.0 | 172.0 |  | Yellow |  | Pre UAT |  |  |
| 192 | Pre-UAT - Provide End to end walkthrough of configured iRisk to Titan | 5 | Completed | 1.0 | 2026-04-06 | 2026-04-06 | 2026-03-10 | 2026-03-10 | -19 | 1.0 | 175.0 | Titan Core Project Team, Zycus Consultant, Zycus Product Specialist | Green |  | Pre UAT |  |  |
| 193 | Provide feedback - if any for iRisk configuration | 5 | Completed | 1.0 | 2026-04-07 | 2026-04-07 | 2026-03-10 | 2026-03-10 | -20 | 1.0 | 174.0 | Titan Project Team | Red |  | Pre UAT |  |  |
| 194 | Zycus to incorporate feedback - as applicable and share final version of Implementation Approach Document [IAD] | 5 | Completed | 1.0 | 2026-04-08 | 2026-04-08 | 2026-03-10 | 2026-03-10 | -21 | 1.0 | 173.0 | Zycus Project Team | Red |  | Pre UAT |  |  |
| 195 | Sign off on Pre-UAT and final version of IAD | 5 | Completed | 1.0 | 2026-04-09 | 2026-04-09 | 2026-03-10 | 2026-03-10 | -22 | 1.0 | 172.0 | Titan Project Manager | Red |  | Pre UAT |  |  |
| 196 | iSource- Prepare for UAT | 3 | Completed | 1.0 | 2026-04-06 | 2026-04-09 | 2026-03-09 | 2026-03-11 | -21 | 4.0 | 172.0 |  | Yellow |  | Pre UAT |  |  |
| 197 | Pre-UAT - Provide End to end walkthrough of configured iSource to Titan | 4 | Completed | 1.0 | 2026-04-06 | 2026-04-06 | 2026-03-09 | 2026-03-09 | -20 | 1.0 | 175.0 | Zycus Consultant, Zycus Product Specialist | Green |  | Pre UAT |  |  |
| 198 | Provide feedback - if any for iSource configuration | 4 | Completed | 1.0 | 2026-04-07 | 2026-04-07 | 2026-03-09 | 2026-03-09 | -21 | 1.0 | 174.0 | Titan Project Team | Red |  | Pre UAT |  |  |
| 199 | Incorporate issue resolution if any and share final version of IAD | 4 | Completed | 1.0 | 2026-04-08 | 2026-04-08 | 2026-03-10 | 2026-03-10 | -21 | 1.0 | 173.0 | Zycus Project Team | Red |  | Pre UAT |  |  |
| 200 | Sign off on Pre-UAT and final version of IAD | 4 | Completed | 1.0 | 2026-04-09 | 2026-04-09 | 2026-03-11 | 2026-03-11 | -21 | 1.0 | 172.0 | Titan Project Manager | Red |  | Pre UAT |  |  |
| 201 | Pre UAT iContract | 3 | Completed | 1.0 | 2026-04-02 | 2026-04-07 | 2026-03-11 | 2026-04-17 | 8 | 4.0 | 174.0 | Zycus Product Specialist | Red |  | Pre UAT |  |  |
| 202 | Pre-UAT - Provide End to end walkthrough of configured iContract to Titan | 4 | Completed | 1.0 | 2026-04-02 | 2026-04-02 | 2026-03-11 | 2026-03-11 | -16 | 1.0 | 177.0 | Titan Core Project Team, Zycus Consultant, Zycus Product Specialist | Red |  | Pre UAT |  |  |
| 203 | Provide feedback - if any for iContract configuration | 4 | Completed | 1.0 | 2026-04-03 | 2026-04-03 | 2026-03-11 | 2026-03-11 | -17 | 1.0 | 176.0 | Titan Project Team | Red |  | Pre UAT |  |  |
| 204 | Zycus to incorporate feedback - as applicable and share final version of Implementation Approach Document [IAD] | 4 | Completed | 1.0 | 2026-04-06 | 2026-04-06 | 2026-03-11 | 2026-03-11 | -18 | 1.0 | 175.0 | Zycus Consultant, Zycus Product Specialist | Red |  | Pre UAT |  |  |
| 205 | Sign off on Pre-UAT and final version of IAD sign off | 4 | Completed | 1.0 | 2026-04-07 | 2026-04-07 | 2026-03-11 | 2026-04-17 | 8 | 1.0 | 174.0 | Titan Project Manager | Red |  | Pre UAT |  |  |
| 206 | iSupplier Pre UAT | 3 | Completed | 1.0 | 2026-04-06 | 2026-05-07 |  |  |  | 24.0 | 152.0 |  | Yellow |  | Pre UAT |  | True |
| 207 | Pre-UAT - Provide End to end walkthrough of configured iSupplier- Functional flow only | 4 | Completed | 1.0 | 2026-04-06 | 2026-04-07 |  |  |  | 2.0 | 174.0 |  | Green |  | Pre UAT |  |  |
| 208 | End to End flow for iSupplier with Integration | 4 | Completed | 1.0 | 2026-05-05 | 2026-05-06 |  |  |  | 2.0 | 153.0 |  | Red |  | Pre UAT |  |  |
| 209 | Provide feedback - if any for iSupplier configuration | 4 | Completed | 1.0 | 2026-04-08 | 2026-04-08 |  |  |  | 1.0 | 173.0 |  | Yellow |  | Pre UAT |  |  |
| 210 | Zycus to incorporate feedback - as applicable and share final version of Implementation Approach Document [IAD] | 4 | Completed | 1.0 | 2026-04-09 | 2026-04-09 |  |  |  | 1.0 | 172.0 |  | Yellow |  | Pre UAT |  |  |
| 211 | Sign off on Pre-UAT and final version of IAD | 4 | Completed | 1.0 | 2026-05-07 | 2026-05-07 |  |  |  | 1.0 | 152.0 |  | Yellow |  | Pre UAT |  |  |

| row_number | name | level | status | percent_complete | start_date | end_date | baseline_start | baseline_finish | variance_days | duration_days | total_float | assigned_to | rag_raw | is_milestone_or_phase | phase_name | not_applicable | predecessors | owner |
| --- | --- | --- | --- | --- | --- | --- | --- | --- | --- | --- | --- | --- | --- | --- | --- | --- | --- | --- |
| 212 | UAT | 1 | Completed | 1.0 | 2026-05-04 | 2026-05-28 | 2026-04-27 | 2026-05-08 | -10 | 19.0 | 137.0 |  | Yellow | True | UAT |  |  |  |
| 213 | UAT-iSource | 2 | Completed | 1.0 | 2026-05-04 | 2026-05-12 | 2026-04-27 | 2026-05-08 | -2 | 7.0 | 149.0 |  | Red |  | UAT |  |  |  |
| 214 | UAT of iSource on STAGING environment | 3 | Completed | 1.0 | 2026-05-04 | 2026-05-05 | 2026-04-27 | 2026-05-08 | 3 | 2.0 | 154.0 | Titan Core Project Team, Zycus Consultant, Zycus Product Specialist | Green |  | UAT |  |  |  |
| 215 | Defect Analysis & UAT Feedback incorporation and share Test Closure Memo | 3 | Completed | 1.0 | 2026-05-05 | 2026-05-08 | 2026-04-27 | 2026-05-08 | 0 | 4.0 | 151.0 | Zycus Project Team | Green |  | UAT |  |  |  |
| 216 | Titan to provide sign off on Test Closure Memo | 3 | Completed | 1.0 | 2026-05-11 | 2026-05-12 | 2026-04-27 | 2026-05-08 | -2 | 2.0 | 149.0 | Titan Core Project Team, Titan Project Manager | Green |  | UAT |  |  |  |
| 217 | UAT- iRequest | 2 | Completed | 1.0 | 2026-05-04 | 2026-05-12 | 2026-04-27 | 2026-05-08 | -2 | 7.0 | 149.0 |  | Red |  | UAT |  |  |  |
| 218 | UAT of iRequest on STAGING environment | 3 | Completed | 1.0 | 2026-05-04 | 2026-05-05 | 2026-04-27 | 2026-05-08 | 3 | 2.0 | 154.0 |  | Green |  | UAT |  |  |  |
| 219 | Defect Analysis & UAT Feedback incorporation and share Test Closure Memo | 3 | Completed | 1.0 | 2026-05-05 | 2026-05-08 | 2026-04-27 | 2026-05-08 | 0 | 4.0 | 151.0 |  | Green |  | UAT |  |  |  |
| 220 | Titan to provide sign off on Test Closure Memo | 3 | Completed | 1.0 | 2026-05-11 | 2026-05-12 | 2026-04-27 | 2026-05-08 | -2 | 2.0 | 149.0 |  | Green |  | UAT |  |  |  |
| 221 | UAT -iContract | 2 | Completed | 1.0 | 2026-05-06 | 2026-05-14 |  |  |  | 7.0 | 147.0 |  | Red |  | UAT |  |  |  |
| 222 | UAT of iContract on STAGING environment | 3 | Completed | 1.0 | 2026-05-06 | 2026-05-07 |  |  |  | 2.0 | 152.0 |  | Yellow |  | UAT |  |  |  |
| 223 | Defect Analysis & UAT Feedback incorporation and share Test Closure Memo | 3 | Completed | 1.0 | 2026-05-07 | 2026-05-12 |  |  |  | 4.0 | 149.0 |  | Yellow |  | UAT |  |  |  |
| 224 | Titan to provide sign off on Test Closure Memo | 3 | Completed | 1.0 | 2026-05-13 | 2026-05-14 |  |  |  | 2.0 | 147.0 |  | Red |  | UAT |  |  |  |
| 225 | UAT -iRisk | 2 | Completed | 1.0 | 2026-05-06 | 2026-05-14 | 2026-04-27 | 2026-05-08 | -4 | 7.0 | 147.0 |  | Red |  | UAT |  |  |  |
| 226 | UAT of iRisk on STAGING environment | 3 | Completed | 1.0 | 2026-05-06 | 2026-05-07 | 2026-04-27 | 2026-05-08 | 1 | 2.0 | 152.0 |  | Yellow |  | UAT |  |  |  |
| 227 | Defect Analysis & UAT Feedback incorporation and share Test Closure Memo | 3 | Completed | 1.0 | 2026-05-07 | 2026-05-12 | 2026-04-27 | 2026-05-08 | -2 | 4.0 | 147.0000000347 |  | Yellow |  | UAT |  |  |  |
| 228 | Titan to provide sign off on Test Closure Memo | 3 | Completed | 1.0 | 2026-05-13 | 2026-05-14 | 2026-04-27 | 2026-05-08 | -4 | 2.0 | 147.0 |  | Red |  | UAT |  | 226 |  |
| 229 | UAT -iSupplier | 2 | Completed | 1.0 | 2026-05-11 | 2026-05-28 | 2026-04-27 | 2026-05-08 | -10 | 14.0 | 137.0 |  | Yellow |  | UAT |  |  |  |
| 230 | UAT of iSupplier on STAGING environment | 3 | Completed | 1.0 | 2026-05-11 | 2026-05-18 | 2026-04-27 | 2026-05-08 | -6 | 6.0 | 137.0000000347 |  | Yellow |  | UAT |  |  |  |
| 231 | Defect Analysis & UAT Feedback incorporation and share Test Closure Memo | 3 | Completed | 1.0 | 2026-05-19 | 2026-05-28 | 2026-04-27 | 2026-05-08 | -8 | 8.0 | 137.0 |  | Yellow |  | UAT |  | 229 |  |
| 232 | Titan to provide sign off on Test Closure Memo | 3 | Completed | 1.0 | 2026-05-21 | 2026-05-22 | 2026-04-27 | 2026-05-08 | -10 | 2.0 | 141.0 |  | Yellow |  | UAT |  |  |  |
| 233 | UAT Sign Off | 2 | Completed | 1.0 | 2026-05-22 | 2026-05-22 |  |  |  | 0.0 | 141.9999999653 |  | Yellow |  | UAT |  |  |  |
| 234 | Train The Trainer | 1 | Completed | 1.0 | 2026-05-14 | 2026-06-19 | 2026-05-11 | 2026-05-22 | -16 | 27.0 | 121.0 |  | Yellow | True | TTT |  |  |  |
| 235 | Training Preparation | 2 | Completed | 1.0 | 2026-05-14 | 2026-05-27 | 2026-05-11 | 2026-05-14 | -9 | 10.0 | 138.0 |  | Yellow |  | TTT |  |  |  |
| 236 | Training Approach and Schedule finalization | 3 | Completed | 1.0 | 2026-05-14 | 2026-05-15 | 2026-05-11 | 2026-05-12 | -10 | 2.0 | 146.0 | Titan Project Manager, Zycus Project Manager, Zycus University | Yellow |  | TTT |  |  |  |
| 237 | Training Agenda Finalization | 3 | Completed | 1.0 | 2026-05-15 | 2026-05-15 | 2026-05-11 | 2026-05-12 | -11 | 1.0 | 146.0 | Titan Project Manager, Zycus University | Yellow |  | TTT |  |  |  |
| 238 | Logistics arrangement for Training | 3 | Unknown | 1.0 | 2026-05-27 | 2026-05-27 | 2026-05-13 | 2026-05-14 | -9 | 1.0 | 138.0 | Zycus Project Manager | Yellow |  | TTT | True |  |  |
| 239 | Train The Trainer Sessions | 2 | Completed | 1.0 | 2026-05-19 | 2026-06-05 |  |  |  | 14.0 | 131.0 |  | Yellow |  | TTT |  |  |  |
| 240 | End User trainings | 2 | Completed | 1.0 | 2026-06-15 | 2026-06-19 |  |  |  | 5.0 | 121.0 |  | Yellow |  | TTT |  |  |  |
| 241 | Production & Cutover | 1 | In Progress | 0.97 | 2026-05-04 | 2026-06-12 | 2026-02-06 | 2026-07-02 | 15 | 30.0 | 126.0 |  | Yellow | True | Migration |  |  |  |
| 242 | Production System Standard Setup | 2 | Completed | 1.0 | 2026-05-04 | 2026-05-06 | 2026-05-11 | 2026-05-22 | 12 | 3.0 | 131.0000000347 |  | Red |  | Migration |  |  |  |
| 243 | SSO and Integration Setup | 2 | Completed | 1.0 | 2026-05-07 | 2026-06-05 | 2026-05-11 | 2026-05-22 | -2 | 22.0 | 131.0 |  | Yellow |  | Migration |  | 241 |  |
| 244 | User list to be provide with access mapping by customer | 2 | Completed | 1.0 | 2026-05-07 | 2026-05-07 |  |  |  | 1.0 | 152.0 |  |  |  | Migration |  | 241 |  |
| 245 | Supplier data to be provided by Customer | 2 | In Progress | 0.8 | 2026-05-04 | 2026-06-05 |  |  |  | 25.0 | 131.0 |  |  |  | Migration |  |  | sagar.chaurasiya@zycus.com |
| 246 | iContract Legacy data to be provided by customer | 2 | Unknown | 1.0 | 2026-05-18 | 2026-06-05 |  |  |  | 15.0 | 131.0 |  |  |  | Migration | True |  |  |
| 247 | User Setup | 2 | Completed | 1.0 | 2026-05-08 | 2026-06-05 | 2026-05-11 | 2026-05-22 | 13 | 21.0 | 131.0 |  | Red |  | Migration |  |  | sagar.chaurasiya@zycus.com |
| 248 | User Upload | 2 | Completed | 1.0 | 2026-05-12 | 2026-06-05 |  |  |  | 19.0 | 131.0 |  | Yellow |  | Migration |  |  | sagar.chaurasiya@zycus.com |
| 249 | iRequest | 2 | Completed | 1.0 | 2026-05-18 | 2026-06-05 |  |  |  | 15.0 | 131.0 |  | Yellow |  | Migration |  |  |  |
| 250 | Production Deployment & Readiness-Migrate Solution from Staging to Prodcution | 3 | Completed | 1.0 | 2026-05-18 | 2026-06-05 |  |  |  | 15.0 | 131.0 |  | Red |  | Migration |  |  | sagar.chaurasiya@zycus.com |
| 251 | iSource | 2 | Completed | 1.0 | 2026-05-18 | 2026-06-05 |  |  |  | 15.0 | 131.0 |  | Yellow |  | Migration |  |  |  |
| 252 | Production Deployment & Readiness-Migrate Solution from Staging to Prodcution | 3 | Completed | 1.0 | 2026-05-18 | 2026-06-05 | 2026-05-11 | 2026-05-22 | 6 | 15.0 | 131.0 |  | Red |  | Migration |  |  |  |
| 253 | iContract | 2 | Completed | 1.0 | 2026-05-18 | 2026-06-05 |  |  |  | 15.0 | 131.0 |  | Yellow |  | Migration |  |  |  |
| 254 | Production Deployment & Readiness-Migrate Solution from Staging to Prodcution | 3 | Completed | 1.0 | 2026-05-18 | 2026-06-05 |  |  |  | 15.0 | 131.0 |  | Yellow |  | Migration |  |  |  |
| 255 | iRisk | 2 | Completed | 1.0 | 2026-05-18 | 2026-06-05 |  |  |  | 15.0 | 131.0 |  | Yellow |  | Migration |  |  |  |
| 256 | Production Deployment & Readiness-Migrate Solution from Staging to Prodcution | 3 | Completed | 1.0 | 2026-05-18 | 2026-06-05 |  |  |  | 15.0 | 131.0 |  | Yellow |  | Migration |  |  |  |
| 257 | iSupplier | 2 | Completed | 1.0 | 2026-05-18 | 2026-06-05 |  |  |  | 15.0 | 131.0 |  | Yellow |  | Migration |  |  |  |
| 258 | Production Deployment & Readiness-Migrate Solution from Staging to Prodcution | 3 | Completed | 1.0 | 2026-05-18 | 2026-06-05 |  |  |  | 15.0 | 131.0 |  | Yellow |  | Migration |  |  |  |
| 259 | Data Load-Historical and bulk upload - iSupplier | 2 | Completed | 1.0 | 2026-06-08 | 2026-06-09 |  |  |  | 2.0 | 129.0 |  | Yellow |  | Migration |  |  |  |
| 260 | Data Load-Historical and bulk upload - iContract | 2 | In Progress | 0.9 | 2026-06-08 | 2026-06-09 | 2026-05-11 | 2026-05-22 | -12 | 2.0 | 129.0 |  | Yellow |  | Migration |  |  |  |
| 261 | Integration Setup from OTK side | 2 | Completed | 1.0 | 2026-05-25 | 2026-06-09 |  |  |  | 12.0 | 129.0 |  | Yellow |  | Migration |  |  |  |
| 262 | Sanity Check of Production system | 2 | Completed | 1.0 | 2026-06-09 | 2026-06-11 |  |  |  | 3.0 | 127.0 |  | Yellow |  | Migration |  |  |  |
| 263 | Go/No-go Check Point ( Meeting with Titan) | 2 | Completed | 1.0 | 2026-06-12 | 2026-06-12 | 2026-05-28 | 2026-05-28 | -7 | 1.0 | 126.0 | Titan Core Project Team, Titan Project Manager, Zycus Project Manager | Yellow |  | Migration |  |  |  |
| 264 | Go-Live & Support intro | 1 | Completed | 1.0 | 2026-06-16 | 2026-06-16 | 2026-05-29 | 2026-05-29 | -8 | 1.0 | 122.0000000694 |  | Yellow | True | Go Live |  |  |  |
| 265 | Go live | 2 | Completed | 1.0 | 2026-06-16 | 2026-06-16 | 2026-05-29 | 2026-05-29 | -8 | 1.0 | 104.0000000347 |  | Yellow |  | Go Live |  |  |  |
| 266 | Release iRequest to all users | 3 | Completed | 1.0 | 2026-06-16 | 2026-06-16 | 2026-05-29 | 2026-05-29 | -8 | 1.0 | 124.0 |  | Yellow |  | Go Live |  |  |  |
| 267 | Release iContract to all users (Soft Launch or Full Launch based on Titan decision) Go-live Sign-off | 3 | Completed | 1.0 | 2026-06-16 | 2026-06-16 | 2026-05-29 | 2026-05-29 | -8 | 1.0 | 124.0 |  | Yellow |  | Go Live |  |  |  |
| 268 | Release iRisk to all users (Pilot Launch or Full Launch based on Titan decision) | 3 | Completed | 1.0 | 2026-06-16 | 2026-06-16 | 2026-05-29 | 2026-05-29 | -8 | 1.0 | 124.0 |  | Yellow |  | Go Live |  |  |  |
| 269 | Release iSupplier to all users (Pilot Launch or Full Launch based on Titan decision) Go-live Sign-off | 3 | Completed | 1.0 | 2026-06-16 | 2026-06-16 | 2026-05-29 | 2026-05-29 | -8 | 1.0 | 124.0 |  | Yellow |  | Go Live |  |  |  |
| 270 | Release iSource to all users (Pilot Launch or Full Launch based on Titan decision) Go-live Sign-off | 3 | Completed | 1.0 | 2026-06-16 | 2026-06-16 | 2026-05-29 | 2026-05-29 | -8 | 1.0 | 124.0 | Zycus Product Specialist | Yellow |  | Go Live |  |  |  |
| 271 | Hyper Care(Measure and Adoption) Solution | 1 | In Progress | 0.06 | 2026-06-17 | 2026-07-14 | 2026-05-29 | 2026-05-29 | -30 | 20.0 | 104.0 |  | Yellow | True | Hypercare |  |  |  |
| 272 | Onboard and Introduce TAM team to Customer | 2 | In Progress | 0.9 | 2026-06-18 | 2026-06-18 | 2026-05-29 | 2026-05-29 | -10 | 1.0 | 121.0000000347 |  | Yellow |  | Hypercare |  | 263FS +1d | Aftab Hashambhai |
| 273 | Walkthrough of post hypercare support process by TAM team | 2 | In Progress | 0.5 | 2026-06-19 | 2026-06-19 | 2026-05-29 | 2026-05-29 | -11 | 1.0 | 121.0 |  | Yellow |  | Hypercare |  | 271 | Aftab Hashambhai |
| 274 | Hypercare Support | 2 | Not Started |  | 2026-06-17 | 2026-07-14 |  |  |  | 20.0 | 104.0 |  | Yellow |  | Hypercare |  | 264 |  |
| 275 | Phase 2 - P2P | 0 | In Progress | 0.21 | 2026-04-22 | 2026-12-07 | 2026-04-15 | 2026-08-10 | -81 | 164.0 | 0.0 |  | Yellow |  | Hypercare |  |  |  |
| 276 | Project Initiation & Data Gathering | 1 | Completed | 1.0 | 2026-04-22 | 2026-06-02 | 2026-04-15 | 2026-04-30 | -15 | 30.0 | 134.0 |  | Yellow |  | Hypercare |  |  |  |
| 277 | Zycus BootCamp | 2 | Completed | 1.0 | 2026-04-22 | 2026-04-23 |  |  |  | 2.0 | 162.0 |  | Green |  | Hypercare |  |  |  |
| 278 | eProc | 3 | Completed | 1.0 | 2026-04-22 | 2026-04-22 |  |  |  | 1.0 | 163.0 |  | Green |  | Hypercare |  |  |  |
| 279 | eInvoice | 3 | Completed | 1.0 | 2026-04-23 | 2026-04-23 |  |  |  | 1.0 | 162.0 |  | Green |  | Hypercare |  |  |  |
| 280 | Logistics Activities | 2 | Completed | 1.0 | 2026-05-18 | 2026-06-02 | 2026-04-15 | 2026-04-20 | -9 | 12.0 | 134.0 |  | Yellow |  | Hypercare |  |  |  |
| 281 | Discuss & Finalize Logistics activity dates - as required | 3 | Completed | 1.0 | 2026-05-18 | 2026-05-22 | 2026-04-15 | 2026-04-15 | -8 | 5.0 | 141.0 | Titan Core Project Team, Titan Project Manager, Zycus Project Manager | Yellow |  | Hypercare |  |  |  |

| row_number | name | level | status | percent_complete | start_date | end_date | baseline_start | baseline_finish | variance_days | duration_days | total_float | assigned_to | rag_raw | phase_name | at_risk | predecessors | priority |
| --- | --- | --- | --- | --- | --- | --- | --- | --- | --- | --- | --- | --- | --- | --- | --- | --- | --- |
| 282 | Share Logistics Plan - if any with Titan | 3 | Completed | 1.0 | 2026-05-25 | 2026-05-29 | 2026-04-16 | 2026-04-16 | -9 | 5.0 | 136.0 | Titan Core Project Team, Titan Project Manager, Zycus Project Manager | Yellow | Hypercare |  |  |  |
| 283 | Review & Approve Logistics Plan | 3 | Completed | 1.0 | 2026-06-01 | 2026-06-01 | 2026-04-17 | 2026-04-17 | -9 | 1.0 | 135.0 | Titan Project Manager | Yellow | Hypercare |  |  |  |
| 284 | Arrange Logistics required for workshop | 3 | Completed | 1.0 | 2026-06-02 | 2026-06-02 | 2026-04-20 | 2026-04-20 | -9 | 1.0 | 134.0 | Zycus Project Manager, Zycus Project Team | Yellow | Hypercare |  |  |  |
| 285 | Data Gathering & STAGING Set Up | 2 | Completed | 1.0 | 2026-04-28 | 2026-05-22 | 2026-04-15 | 2026-04-30 | -15 | 19.0 | 141.0 |  | Yellow | Hypercare |  |  |  |
| 286 | Discussion on Pre-Requisites as per agenda shared | 3 | Completed | 1.0 | 2026-04-28 | 2026-05-22 | 2026-04-15 | 2026-04-30 | -15 | 19.0 | 141.0 |  | Yellow | Hypercare |  |  |  |
| 287 | Sessions as per Pre-Requisite agenda | 4 | Completed | 1.0 | 2026-04-28 | 2026-04-30 | 2026-04-15 | 2026-04-28 | -2 | 3.0 | 157.0 | Titan Core Project Team, Zycus Project Team | Green | Hypercare |  |  |  |
| 288 | Pre workshop discussion for Integration | 4 | Completed | 1.0 | 2026-05-18 | 2026-05-22 | 2026-04-29 | 2026-04-30 | -11 | 5.0 | 141.0 |  | Yellow | Hypercare |  |  |  |
| 289 | Titan As-Is Discussion | 4 | Completed | 1.0 | 2026-05-11 | 2026-05-14 |  |  |  | 4.0 | 147.0 |  | Yellow | Hypercare |  |  |  |
| 290 | Data gathering | 4 | Completed | 1.0 | 2026-05-01 | 2026-05-22 |  |  |  | 16.0 | 141.0 |  | Yellow | Hypercare |  |  |  |
| 291 | Share Pre-Requisite documents and information as per the templates shared by Zycus with Samples | 5 | Completed | 1.0 | 2026-05-01 | 2026-05-22 | 2026-04-15 | 2026-04-16 | -25 | 16.0 | 141.0 | Titan Core Project Team, Titan Project Manager | Yellow | Hypercare | True |  |  |
| 292 | Configuration Documentation workshop | 1 | In Progress | 0.25 | 2026-06-22 | 2026-07-13 | 2026-04-21 | 2026-05-26 | -43 | 16.0 | 105.0 |  | Yellow | Hypercare |  |  |  |
| 293 | P2P, iSupplier Configuration Documentation Workshop | 2 | Completed | 1.0 | 2026-06-22 | 2026-06-26 | 2026-04-21 | 2026-05-04 | -22 | 5.0 | 88.0000002083 | Titan Core Project Team, Titan Project Manager, Zycus Merlin Product Team, Zycus Project Manager, Zycus Project Team | Yellow | Hypercare | True |  |  |
| 294 | Master data to be provided by OTK team | 2 | Not Started |  | 2026-06-26 | 2026-07-02 |  |  |  | 5.0 | 88.0000002083 |  |  | Hypercare |  |  | High |
| 295 | Workflow details & CULT table details to be provided by OTK | 2 | Not Started |  | 2026-06-26 | 2026-07-10 |  |  |  | 11.0 | 106.0 |  |  | Hypercare |  |  |  |
| 296 | Develop & Publish 1st draft of Implementation Approach Document (IAD) for eProc-eInvoice | 2 | Not Started | 0.0 | 2026-07-07 | 2026-07-09 | 2026-05-12 | 2026-05-12 | -24 | 3.0 | 88.0000002083 | Zycus Consultant | Yellow | Hypercare |  | 292, 293FS +2d |  |
| 297 | eProc-eInvoice IAD Review and Sign off by Titan | 2 | Not Started | 0.0 | 2026-07-10 | 2026-07-13 | 2026-05-13 | 2026-05-13 | -25 | 2.0 | 88.0000002083 | Titan Project Manager | Yellow | Hypercare |  | 295 |  |
| 298 | P2P Integration Design | 2 | In Progress | 0.39 | 2026-06-29 | 2026-07-10 |  |  |  | 10.0 | 106.0 |  | Yellow | Hypercare |  |  |  |
| 299 | eInvoice outbound | 3 | In Progress | 0.9 | 2026-06-29 | 2026-06-29 | 2026-05-12 | 2026-05-19 | -22 | 1.0 | 115.0 |  | Yellow | Hypercare |  |  |  |
| 300 | eInvoice integration use cases discussion-Invoice,creditmemo,payment,apportionment | 4 | In Progress | 0.9 | 2026-06-29 | 2026-06-29 | 2026-05-12 | 2026-05-13 | -22 | 1.0 | 115.0 |  | Yellow | Hypercare |  |  |  |
| 301 | eProc Direct & Indirect | 3 | In Progress | 0.9 | 2026-06-30 | 2026-07-01 | 2026-05-12 | 2026-05-18 | -30 | 2.0 | 113.0 |  | Yellow | Hypercare |  |  |  |
| 302 | eProc integration use cases discussion-create,edit,cancel,close | 4 | In Progress | 0.9 | 2026-06-30 | 2026-07-01 | 2026-05-12 | 2026-05-12 | -30 | 2.0 | 113.0 |  | Yellow | Hypercare |  |  |  |
| 303 | Master data inbound | 3 | Not Started | 0.0 | 2026-07-07 | 2026-07-08 | 2026-05-12 | 2026-05-13 | -44 | 2.0 | 108.0 |  | Yellow | Hypercare |  |  |  |
| 304 | Master data discussion overall and connectivity-2 master data-Increase the days based on master data count including DDT/DMT | 4 | Not Started | 0.0 | 2026-07-07 | 2026-07-08 | 2026-05-12 | 2026-05-12 | -42 | 2.0 | 89.0000002083 |  | Yellow | Hypercare |  |  |  |
| 305 | Review and feedback incorporation | 3 | Not Started | 0.0 | 2026-07-09 | 2026-07-09 |  |  |  | 1.0 | 89.0000002083 | Titan Integration Team, Titan Project Manager, Zycus Consultant, Zycus Integration Specialist | Yellow | Hypercare |  | 303 |  |
| 306 | Sign off on LLD | 3 | Not Started | 0.0 | 2026-07-10 | 2026-07-10 |  |  |  | 1.0 | 89.0000002083 | Titan Project Manager | Yellow | Hypercare |  | 304 |  |
| 307 | Configuration and Build phase | 1 | Not Started |  | 2026-07-13 | 2026-09-03 |  |  |  | 39.0 | 67.0 |  |  | Hypercare |  |  |  |
| 308 | eInvoice Config, Pre-UAT, Integration Design & Development and SIT | 2 | Not Started |  | 2026-07-13 | 2026-09-03 |  |  |  | 39.0 | 67.0 |  |  | Hypercare |  |  |  |
| 309 | Functional Configuration Finalization on STAGING set Up | 3 | Not Started |  | 2026-07-14 | 2026-08-07 |  |  |  | 19.0 | 86.0 |  |  | Hypercare |  |  |  |
| 310 | User Roles configuration | 4 | Not Started |  | 2026-07-14 | 2026-07-15 |  |  |  | 2.0 | 88.0000001736 |  |  | Hypercare |  | 296 |  |
| 311 | Admin settings configuration | 4 | Not Started |  | 2026-07-16 | 2026-07-17 |  |  |  | 2.0 | 88.0000001389 |  |  | Hypercare |  | 309 |  |
| 312 | Configure Workflow | 4 | Not Started |  | 2026-07-20 | 2026-07-24 |  |  |  | 5.0 | 88.0000001042 |  |  | Hypercare |  | 310 |  |
| 313 | Readiness for Pre-UAT | 4 | Not Started |  | 2026-07-27 | 2026-07-28 |  |  |  | 2.0 | 88.0000000694 |  |  | Hypercare |  | 311 |  |
| 314 | Pre-UAT on STAGING | 4 | Not Started |  | 2026-07-27 | 2026-08-07 |  |  |  | 10.0 | 86.0 |  |  | Hypercare |  |  |  |
| 315 | Pre-UAT - Provide End to end walkthrough of configured eProc to the Customer | 5 | Not Started |  | 2026-07-29 | 2026-07-31 |  |  |  | 3.0 | 88.0000000347 |  |  | Hypercare |  | 312 |  |
| 316 | Pre-UAT for eInvoice | 5 | Not Started |  | 2026-08-03 | 2026-08-05 |  |  |  | 3.0 | 88.0 |  |  | Hypercare |  | 314 |  |
| 317 | Provide feedback - if any for eProc configuration | 5 | Not Started |  | 2026-07-27 | 2026-07-30 |  |  |  | 4.0 | 55.0000001042 |  |  | Hypercare |  |  |  |
| 318 | Zycus to incorporate feedback - as applicable and share final version of Implementation Approach Document [IAD] | 5 | Not Started |  | 2026-07-31 | 2026-08-06 |  |  |  | 5.0 | 55.0000001042 |  |  | Hypercare |  | 316 |  |
| 319 | Sign off on Pre-UAT and final version of IAD | 5 | Not Started |  | 2026-08-07 | 2026-08-07 |  |  |  | 1.0 | 55.0000001042 |  |  | Hypercare |  | 317 |  |
| 320 | eInvoice : Conclude Functional Configuration | 3 | Not Started |  | 2026-08-10 | 2026-08-10 |  |  |  | 1.0 | 55.0000001042 |  |  | Hypercare |  | 318 |  |
| 321 | eInvoice Integration | 3 | Not Started |  | 2026-07-13 | 2026-09-03 |  |  |  | 39.0 | 67.0 |  |  | Hypercare |  |  |  |
| 322 | Integration Design | 4 | Not Started |  | 2026-07-13 | 2026-07-21 |  |  |  | 7.0 | 99.0 |  |  | Hypercare |  |  |  |
| 323 | Mapping activity for Integration | 5 | Not Started |  | 2026-07-13 | 2026-07-14 |  |  |  | 2.0 | 99.0000001042 |  |  | Hypercare |  | 305 |  |
| 324 | Share TDD for interface | 5 | Not Started |  | 2026-07-15 | 2026-07-15 |  |  |  | 1.0 | 99.0000000694 |  |  | Hypercare |  | 322 |  |
| 325 | Review of TDD and share feedback with Zycus | 5 | Not Started |  | 2026-07-16 | 2026-07-17 |  |  |  | 2.0 | 99.0000000347 |  |  | Hypercare |  | 323 |  |
| 326 | Sign off on TDD | 5 | Not Started |  | 2026-07-20 | 2026-07-21 |  |  |  | 2.0 | 99.0 |  |  | Hypercare |  | 324 |  |
| 327 | Development and Testing on STAGING Set Up | 4 | Not Started |  | 2026-08-11 | 2026-09-03 |  |  |  | 18.0 | 67.0 |  |  | Hypercare |  |  |  |
| 328 | Integration set up and development at Zycus | 5 | Not Started |  | 2026-08-11 | 2026-08-17 |  |  |  | 5.0 | 80.0 |  |  | Hypercare |  | 319 |  |
| 329 | Integration development at Titan - as applicable | 5 | Not Started |  | 2026-08-11 | 2026-08-17 |  |  |  | 5.0 | 55.0000001042 |  |  | Hypercare |  | 319 |  |
| 330 | Integration Unit Testing and Feedback Incorporation | 5 | Not Started |  | 2026-08-18 | 2026-08-19 |  |  |  | 2.0 | 55.0000001042 |  |  | Hypercare |  | 328 |  |
| 331 | Systems Integration Testing | 5 | Not Started |  | 2026-08-20 | 2026-09-03 |  |  |  | 11.0 | 67.0 |  |  | Hypercare |  |  |  |
| 332 | SIT on STAGING Set Up | 6 | Not Started |  | 2026-08-20 | 2026-09-02 |  |  |  | 10.0 | 55.0000001042 |  |  | Hypercare |  | 329 |  |
| 333 | Sign off on SIT | 6 | Not Started |  | 2026-09-03 | 2026-09-03 |  |  |  | 1.0 | 55.0000001042 |  |  | Hypercare |  | 331 |  |
| 334 | Integrations Punchout 1 | 4 | Not Started |  | 2026-07-13 | 2026-08-04 |  |  |  | 17.0 | 89.0 |  |  | Hypercare |  |  |  |
| 335 | eInvoice Integration | 5 | Not Started |  | 2026-07-13 | 2026-08-04 |  |  |  | 17.0 | 89.0 |  |  | Hypercare |  |  |  |
| 336 | Integration Design | 6 | Not Started |  | 2026-07-13 | 2026-07-16 |  |  |  | 4.0 | 102.0 |  |  | Hypercare |  |  |  |
| 337 | Questionnaire Sharing and Sample Files with Supplier | 7 | Not Started |  | 2026-07-13 | 2026-07-13 |  |  |  | 1.0 | 89.0000001736 |  |  | Hypercare |  | 305 |  |
| 338 | Supplier Registration on ZSN staging | 7 | Not Started |  | 2026-07-14 | 2026-07-16 |  |  |  | 3.0 | 89.0000001389 |  |  | Hypercare |  | 336 |  |
| 339 | Development and Testing on STAGING Set Up | 6 | Not Started |  | 2026-07-17 | 2026-08-04 |  |  |  | 13.0 | 89.0 |  |  | Hypercare |  |  |  |
| 340 | Punchout Setup and Connectivity testing | 7 | Not Started |  | 2026-07-17 | 2026-07-23 |  |  |  | 5.0 | 89.0000001042 |  |  | Hypercare |  | 337 |  |
| 341 | PO and Invoice Unit Testing | 7 | Not Started |  | 2026-07-24 | 2026-07-27 |  |  |  | 2.0 | 89.0000000694 |  |  | Hypercare |  | 339 |  |
| 342 | Zycus test case documentation | 7 | Not Started |  | 2026-07-28 | 2026-07-28 |  |  |  | 1.0 | 94.0 |  |  | Hypercare |  | 340 |  |
| 343 | Systems Integration Testing | 7 | Not Started |  | 2026-07-28 | 2026-08-04 |  |  |  | 6.0 | 89.0 |  |  | Hypercare |  |  |  |
| 344 | SIT on STAGING Set Up | 8 | Not Started |  | 2026-07-28 | 2026-08-03 |  |  |  | 5.0 | 89.0000000347 |  |  | Hypercare |  | 340 |  |
| 345 | Sign off on SIT | 8 | Not Started |  | 2026-08-04 | 2026-08-04 |  |  |  | 1.0 | 89.0 |  |  | Hypercare |  | 343 |  |
| 346 | Integrations Punchout 2 | 4 | Not Started |  | 2026-07-13 | 2026-08-04 |  |  |  | 17.0 | 89.0 |  |  | Hypercare |  |  |  |
| 347 | eInvoice Integration | 5 | Not Started |  | 2026-07-13 | 2026-08-04 |  |  |  | 17.0 | 89.0 |  |  | Hypercare |  |  |  |
| 348 | Integration Design | 6 | Not Started |  | 2026-07-13 | 2026-07-16 |  |  |  | 4.0 | 102.0 |  |  | Hypercare |  |  |  |
| 349 | Questionnaire Sharing and Sample Files with Supplier | 7 | Not Started |  | 2026-07-13 | 2026-07-13 |  |  |  | 1.0 | 89.0000001736 |  |  | Hypercare |  | 305 |  |
| 350 | Supplier Registration on ZSN staging | 7 | Not Started |  | 2026-07-14 | 2026-07-16 |  |  |  | 3.0 | 89.0000001389 |  |  | Hypercare |  | 348 |  |
| 351 | Development and Testing on STAGING Set Up | 6 | Not Started |  | 2026-07-17 | 2026-08-04 |  |  |  | 13.0 | 89.0 |  |  | Hypercare |  |  |  |

| row_number | name | level | status | start_date | end_date | duration_days | total_float | phase_name | predecessors |
| --- | --- | --- | --- | --- | --- | --- | --- | --- | --- |
| 352 | Punchout Setup and Connectivity testing | 7 | Not Started | 2026-07-17 | 2026-07-23 | 5.0 | 89.0000001042 | Hypercare | 349 |
| 353 | PO and Invoice Unit Testing | 7 | Not Started | 2026-07-24 | 2026-07-27 | 2.0 | 89.0000000694 | Hypercare | 351 |
| 354 | Zycus test case documentation | 7 | Not Started | 2026-07-28 | 2026-07-28 | 1.0 | 94.0 | Hypercare | 352 |
| 355 | Systems Integration Testing | 7 | Not Started | 2026-07-28 | 2026-08-04 | 6.0 | 89.0 | Hypercare |  |
| 356 | SIT on STAGING Set Up | 8 | Not Started | 2026-07-28 | 2026-08-03 | 5.0 | 89.0000000347 | Hypercare | 352 |
| 357 | Sign off on SIT | 8 | Not Started | 2026-08-04 | 2026-08-04 | 1.0 | 89.0 | Hypercare | 355 |
| 358 | Integrations Punchout 3 | 4 | Not Started | 2026-07-13 | 2026-08-04 | 17.0 | 89.0 | Hypercare |  |
| 359 | eInvoice Integration | 5 | Not Started | 2026-07-13 | 2026-08-04 | 17.0 | 89.0 | Hypercare |  |
| 360 | Integration Design | 6 | Not Started | 2026-07-13 | 2026-07-16 | 4.0 | 102.0 | Hypercare |  |
| 361 | Questionnaire Sharing and Sample Files with Supplier | 7 | Not Started | 2026-07-13 | 2026-07-13 | 1.0 | 89.0000001736 | Hypercare | 305 |
| 362 | Supplier Registration on ZSN staging | 7 | Not Started | 2026-07-14 | 2026-07-16 | 3.0 | 89.0000001389 | Hypercare | 360 |
| 363 | Development and Testing on STAGING Set Up | 6 | Not Started | 2026-07-17 | 2026-08-04 | 13.0 | 89.0 | Hypercare |  |
| 364 | Punchout Setup and Connectivity testing | 7 | Not Started | 2026-07-17 | 2026-07-23 | 5.0 | 89.0000001042 | Hypercare | 361 |
| 365 | PO and Invoice Unit Testing | 7 | Not Started | 2026-07-24 | 2026-07-27 | 2.0 | 89.0000000694 | Hypercare | 363 |
| 366 | Zycus test case documentation | 7 | Not Started | 2026-07-28 | 2026-07-28 | 1.0 | 94.0 | Hypercare | 364 |
| 367 | Systems Integration Testing | 7 | Not Started | 2026-07-28 | 2026-08-04 | 6.0 | 89.0 | Hypercare |  |
| 368 | SIT on STAGING Set Up | 8 | Not Started | 2026-07-28 | 2026-08-03 | 5.0 | 89.0000000347 | Hypercare | 364 |
| 369 | Sign off on SIT | 8 | Not Started | 2026-08-04 | 2026-08-04 | 1.0 | 89.0 | Hypercare | 367 |
| 370 | eProc Config, Pre-UAT, Integration Design & Development and SIT | 2 | Not Started | 2026-07-13 | 2026-09-03 | 39.0 | 67.0 | Hypercare |  |
| 371 | Functional Configuration Finalization on STAGING set Up | 3 | Not Started | 2026-07-14 | 2026-08-07 | 19.0 | 86.0 | Hypercare |  |
| 372 | User Roles configuration | 4 | Not Started | 2026-07-14 | 2026-07-15 | 2.0 | 88.0000001736 | Hypercare | 296 |
| 373 | Admin settings configuration | 4 | Not Started | 2026-07-16 | 2026-07-17 | 2.0 | 88.0000001389 | Hypercare | 371 |
| 374 | Configure Workflow | 4 | Not Started | 2026-07-20 | 2026-07-24 | 5.0 | 88.0000001042 | Hypercare | 372 |
| 375 | Readiness for Pre-UAT | 4 | Not Started | 2026-07-27 | 2026-07-28 | 2.0 | 88.0000000694 | Hypercare | 373 |
| 376 | Pre-UAT on STAGING | 4 | Not Started | 2026-07-27 | 2026-08-07 | 10.0 | 86.0 | Hypercare |  |
| 377 | Pre-UAT - Provide End to end walkthrough of configured eProc to the Customer | 5 | Not Started | 2026-07-29 | 2026-07-31 | 3.0 | 88.0000000347 | Hypercare | 374 |
| 378 | Pre-UAT for eProc Direct | 5 | Not Started | 2026-08-03 | 2026-08-05 | 3.0 | 88.0 | Hypercare | 376 |
| 379 | Provide feedback - if any for eProc Direct configuration | 5 | Not Started | 2026-07-27 | 2026-07-30 | 4.0 | 55.0000001042 | Hypercare |  |
| 380 | Zycus to incorporate feedback - as applicable and share final version of Implementation Approach Document [IAD] | 5 | Not Started | 2026-07-31 | 2026-08-06 | 5.0 | 55.0000001042 | Hypercare | 378 |
| 381 | Sign off on Pre-UAT and final version of IAD | 5 | Not Started | 2026-08-07 | 2026-08-07 | 1.0 | 55.0000001042 | Hypercare | 379 |
| 382 | eProc Direct : Conclude Functional Configuration | 3 | Not Started | 2026-08-10 | 2026-08-10 | 1.0 | 55.0000001042 | Hypercare | 380 |
| 383 | Integrations eProc Direct | 3 | Not Started | 2026-07-13 | 2026-09-03 | 39.0 | 67.0 | Hypercare |  |
| 384 | eProc Direct Integration | 4 | Not Started | 2026-07-13 | 2026-09-03 | 39.0 | 67.0 | Hypercare |  |
| 385 | Integration Design | 5 | Not Started | 2026-07-13 | 2026-07-21 | 7.0 | 99.0 | Hypercare |  |
| 386 | Mapping activity for Integration | 6 | Not Started | 2026-07-13 | 2026-07-14 | 2.0 | 99.0000001042 | Hypercare | 305 |
| 387 | Share TDD for interface | 6 | Not Started | 2026-07-15 | 2026-07-15 | 1.0 | 99.0000000694 | Hypercare | 385 |
| 388 | Review of TDD and share feedback with Zycus | 6 | Not Started | 2026-07-16 | 2026-07-17 | 2.0 | 99.0000000347 | Hypercare | 386 |
| 389 | Sign off on TDD | 6 | Not Started | 2026-07-20 | 2026-07-21 | 2.0 | 99.0 | Hypercare | 387 |
| 390 | Development and Testing on STAGING Set Up | 5 | Not Started | 2026-08-11 | 2026-09-03 | 18.0 | 67.0 | Hypercare |  |
| 391 | Integration set up and development at Zycus | 6 | Not Started | 2026-08-11 | 2026-08-17 | 5.0 | 80.0 | Hypercare | 381 |
| 392 | Integration development at Titan - as applicable | 6 | Not Started | 2026-08-11 | 2026-08-17 | 5.0 | 55.0000001042 | Hypercare | 381 |
| 393 | Integration Unit Testing and Feedback Incorporation | 6 | Not Started | 2026-08-18 | 2026-08-19 | 2.0 | 55.0000001042 | Hypercare | 391 |
| 394 | Systems Integration Testing | 6 | Not Started | 2026-08-20 | 2026-09-03 | 11.0 | 67.0 | Hypercare |  |
| 395 | SIT on STAGING Set Up | 7 | Not Started | 2026-08-20 | 2026-09-02 | 10.0 | 55.0000001042 | Hypercare | 392 |
| 396 | Sign off on SIT | 7 | Not Started | 2026-09-03 | 2026-09-03 | 1.0 | 55.0000001042 | Hypercare | 394 |
| 397 | eProc In-Direct Config, Pre-UAT, Integration Design & Development and SIT | 2 | Not Started | 2026-07-13 | 2026-09-03 | 39.0 | 67.0 | Hypercare |  |
| 398 | Functional Configuration Finalization on STAGING set Up | 3 | Not Started | 2026-07-14 | 2026-08-07 | 19.0 | 86.0 | Hypercare |  |
| 399 | User Roles configuration | 4 | Not Started | 2026-07-14 | 2026-07-15 | 2.0 | 88.0000001736 | Hypercare | 296 |
| 400 | Admin settings configuration | 4 | Not Started | 2026-07-16 | 2026-07-17 | 2.0 | 88.0000001389 | Hypercare | 398 |
| 401 | Configure Workflow | 4 | Not Started | 2026-07-20 | 2026-07-24 | 5.0 | 88.0000001042 | Hypercare | 399 |
| 402 | Readiness for Pre-UAT | 4 | Not Started | 2026-07-27 | 2026-07-28 | 2.0 | 88.0000000694 | Hypercare | 400 |
| 403 | Pre-UAT on STAGING | 4 | Not Started | 2026-07-27 | 2026-08-07 | 10.0 | 86.0 | Hypercare |  |
| 404 | Pre-UAT - Provide End to end walkthrough of configured eProc to the Customer | 5 | Not Started | 2026-07-29 | 2026-07-31 | 3.0 | 88.0000000347 | Hypercare | 401 |
| 405 | eProc Direct Pre-UAT | 5 | Not Started | 2026-08-03 | 2026-08-05 | 3.0 | 88.0 | Hypercare | 403 |
| 406 | Provide feedback - if any for eProc configuration | 5 | Not Started | 2026-07-27 | 2026-07-30 | 4.0 | 55.0000001042 | Hypercare |  |
| 407 | Zycus to incorporate feedback - as applicable and share final version of Implementation Approach Document [IAD] | 5 | Not Started | 2026-07-31 | 2026-08-06 | 5.0 | 55.0000001042 | Hypercare | 405 |
| 408 | Sign off on Pre-UAT and final version of IAD | 5 | Not Started | 2026-08-07 | 2026-08-07 | 1.0 | 55.0000001042 | Hypercare | 406 |
| 409 | eProc Direct : Conclude Functional Configuration | 3 | Not Started | 2026-08-10 | 2026-08-10 | 1.0 | 55.0000001042 | Hypercare | 407 |
| 410 | Integrations eInvoice | 3 | Not Started | 2026-07-13 | 2026-09-03 | 39.0 | 67.0 | Hypercare |  |
| 411 | Integration Design | 4 | Not Started | 2026-07-13 | 2026-07-21 | 7.0 | 99.0 | Hypercare |  |
| 412 | Mapping activity for Integration | 5 | Not Started | 2026-07-13 | 2026-07-14 | 2.0 | 99.0000001042 | Hypercare | 305 |
| 413 | Share TDD for interface | 5 | Not Started | 2026-07-15 | 2026-07-15 | 1.0 | 99.0000000694 | Hypercare | 411 |
| 414 | Review of TDD and share feedback with Zycus | 5 | Not Started | 2026-07-16 | 2026-07-17 | 2.0 | 99.0000000347 | Hypercare | 412 |
| 415 | Sign off on TDD | 5 | Not Started | 2026-07-20 | 2026-07-21 | 2.0 | 99.0 | Hypercare | 413 |
| 416 | Development and Testing on STAGING Set Up | 4 | Not Started | 2026-08-11 | 2026-09-03 | 18.0 | 67.0 | Hypercare |  |
| 417 | Integration set up and development at Zycus | 5 | Not Started | 2026-08-11 | 2026-08-17 | 5.0 | 80.0 | Hypercare | 408 |
| 418 | Integration development at Titan - as applicable | 5 | Not Started | 2026-08-11 | 2026-08-17 | 5.0 | 55.0000001042 | Hypercare | 408 |
| 419 | Integration Unit Testing and Feedback Incorporation | 5 | Not Started | 2026-08-18 | 2026-08-19 | 2.0 | 55.0000001042 | Hypercare | 417 |
| 420 | Systems Integration Testing | 5 | Not Started | 2026-08-20 | 2026-09-03 | 11.0 | 67.0 | Hypercare |  |
| 421 | SIT on STAGING Set Up | 6 | Not Started | 2026-08-20 | 2026-09-02 | 10.0 | 55.0000001042 | Hypercare | 418 |

| row_number | name | level | status | percent_complete | start_date | end_date | baseline_start | baseline_finish | variance_days | duration_days | critical | total_float | assigned_to | rag_raw | phase_name | predecessors |
| --- | --- | --- | --- | --- | --- | --- | --- | --- | --- | --- | --- | --- | --- | --- | --- | --- |
| 422 | Sign off on SIT | 6 | Not Started |  | 2026-09-03 | 2026-09-03 |  |  |  | 1.0 |  | 55.0000001042 |  |  | Hypercare | 420 |
| 423 | Masterdata Config, Pre-UAT, Integration Design & Development and SIT | 2 | Not Started |  | 2026-07-13 | 2026-09-03 |  |  |  | 39.0 |  | 67.0 |  |  | Hypercare |  |
| 424 | Functional Configuration Finalization on STAGING set Up | 3 | Not Started |  | 2026-07-14 | 2026-08-07 |  |  |  | 19.0 |  | 86.0 |  |  | Hypercare |  |
| 425 | User Roles configuration | 4 | Not Started |  | 2026-07-14 | 2026-07-15 |  |  |  | 2.0 |  | 88.0000001736 |  |  | Hypercare | 296 |
| 426 | Admin settings configuration | 4 | Not Started |  | 2026-07-16 | 2026-07-17 |  |  |  | 2.0 |  | 88.0000001389 |  |  | Hypercare | 424 |
| 427 | Configure Workflow | 4 | Not Started |  | 2026-07-20 | 2026-07-24 |  |  |  | 5.0 |  | 88.0000001042 |  |  | Hypercare | 425 |
| 428 | Readiness for Pre-UAT | 4 | Not Started |  | 2026-07-27 | 2026-07-28 |  |  |  | 2.0 |  | 88.0000000694 |  |  | Hypercare | 426 |
| 429 | Pre-UAT on STAGING | 4 | Not Started |  | 2026-07-27 | 2026-08-07 |  |  |  | 10.0 |  | 86.0 |  |  | Hypercare |  |
| 430 | Pre-UAT - Provide End to end walkthrough of configured eProc to the Customer | 5 | Not Started |  | 2026-07-29 | 2026-07-31 |  |  |  | 3.0 |  | 88.0000000347 |  |  | Hypercare | 427 |
| 431 | Pre-UAT of Master Data | 5 | Not Started |  | 2026-08-03 | 2026-08-05 |  |  |  | 3.0 |  | 88.0 |  |  | Hypercare | 429 |
| 432 | Provide feedback - if any for masterdata configuration | 5 | Not Started |  | 2026-07-27 | 2026-07-30 |  |  |  | 4.0 |  | 55.0000001042 |  |  | Hypercare |  |
| 433 | Zycus to incorporate feedback - as applicable and share final version of Implementation Approach Document [IAD] | 5 | Not Started |  | 2026-07-31 | 2026-08-06 |  |  |  | 5.0 |  | 55.0000001042 |  |  | Hypercare | 431 |
| 434 | Sign off on Pre-UAT and final version of IAD | 5 | Not Started |  | 2026-08-07 | 2026-08-07 |  |  |  | 1.0 |  | 55.0000001042 |  |  | Hypercare | 432 |
| 435 | Master Data: Conclude Functional Configuration | 3 | Not Started |  | 2026-08-10 | 2026-08-10 |  |  |  | 1.0 |  | 55.0000001042 |  |  | Hypercare | 433 |
| 436 | Integrations Master data | 3 | Not Started |  | 2026-07-13 | 2026-09-03 |  |  |  | 39.0 |  | 67.0 |  |  | Hypercare |  |
| 437 | Integration Design | 4 | Not Started |  | 2026-07-13 | 2026-07-21 |  |  |  | 7.0 |  | 99.0 |  |  | Hypercare |  |
| 438 | Mapping activity for Integration | 5 | Not Started |  | 2026-07-13 | 2026-07-14 |  |  |  | 2.0 |  | 99.0000001042 |  |  | Hypercare | 305 |
| 439 | Share TDD for interface | 5 | Not Started |  | 2026-07-15 | 2026-07-15 |  |  |  | 1.0 |  | 99.0000000694 |  |  | Hypercare | 437 |
| 440 | Review of TDD and share feedback with Zycus | 5 | Not Started |  | 2026-07-16 | 2026-07-17 |  |  |  | 2.0 |  | 99.0000000347 |  |  | Hypercare | 438 |
| 441 | Sign off on TDD | 5 | Not Started |  | 2026-07-20 | 2026-07-21 |  |  |  | 2.0 |  | 99.0 |  |  | Hypercare | 439 |
| 442 | Development and Testing on STAGING Set Up | 4 | Not Started |  | 2026-08-11 | 2026-09-03 |  |  |  | 18.0 |  | 67.0 |  |  | Hypercare |  |
| 443 | Integration set up and development at Zycus | 5 | Not Started |  | 2026-08-11 | 2026-08-17 |  |  |  | 5.0 |  | 80.0 |  |  | Hypercare | 434 |
| 444 | Integration development at Titan - as applicable | 5 | Not Started |  | 2026-08-11 | 2026-08-17 |  |  |  | 5.0 |  | 55.0000001042 |  |  | Hypercare | 434 |
| 445 | Integration Unit Testing and Feedback Incorporation | 5 | Not Started |  | 2026-08-18 | 2026-08-19 |  |  |  | 2.0 |  | 55.0000001042 |  |  | Hypercare | 443 |
| 446 | Systems Integration Testing | 5 | Not Started |  | 2026-08-20 | 2026-09-03 |  |  |  | 11.0 |  | 67.0 |  |  | Hypercare |  |
| 447 | SIT on STAGING Set Up | 6 | Not Started |  | 2026-08-20 | 2026-09-02 |  |  |  | 10.0 |  | 55.0000001042 |  |  | Hypercare | 444 |
| 448 | Sign off on SIT | 6 | Not Started |  | 2026-09-03 | 2026-09-03 |  |  |  | 1.0 |  | 55.0000001042 |  |  | Hypercare | 446 |
| 449 | User Acceptance Testing (UAT) | 1 | Not Started | 0.0 | 2026-09-04 | 2026-10-20 |  |  |  | 33.0 |  | 34.0 |  |  | Hypercare |  |
| 450 | Prepare for UAT | 2 | Not Started |  | 2026-09-04 | 2026-09-14 |  |  |  | 7.0 |  | 60.0 |  |  | Hypercare |  |
| 451 | Prepare the UAT Approach | 3 | Not Started |  | 2026-09-04 | 2026-09-07 |  |  |  | 2.0 |  | 55.0000001042 |  |  | Hypercare | 332, 395, 421, 447 |
| 452 | Finalize and agree on UAT Approach | 3 | Not Started |  | 2026-09-08 | 2026-09-09 |  |  |  | 2.0 |  | 63.0 |  |  | Hypercare | 450 |
| 453 | Provide users & roles on STAGING required for UAT | 3 | Not Started |  | 2026-09-08 | 2026-09-08 |  |  |  | 1.0 |  | 64.0 |  |  | Hypercare | 450 |
| 454 | Create users on STAGING set for UAT group | 3 | Not Started |  | 2026-09-08 | 2026-09-09 |  |  |  | 2.0 |  | 63.0 |  |  | Hypercare | 450 |
| 455 | Provide Standard Test Cases | 3 | Not Started |  | 2026-09-08 | 2026-09-10 |  |  |  | 3.0 |  | 55.0000000694 |  |  | Hypercare | 450 |
| 456 | Finalize Test Cases | 3 | Not Started |  | 2026-09-11 | 2026-09-14 |  |  |  | 2.0 |  | 55.0000000347 |  |  | Hypercare | 454 |
| 457 | Quality Reviews | 2 | Not Started |  | 2026-09-08 | 2026-09-11 |  |  |  | 4.0 |  | 61.0 |  |  | Hypercare |  |
| 458 | Schedule for quality check | 3 | Not Started |  | 2026-09-08 | 2026-09-08 |  |  |  | 1.0 |  | 61.0000000694 |  |  | Hypercare | 450 |
| 459 | Perform quality checks, PSRs as per quality checklist and submit to QC team | 3 | Not Started |  | 2026-09-09 | 2026-09-10 |  |  |  | 2.0 |  | 61.0000000347 |  |  | Hypercare | 457 |
| 460 | Quality Check by Zycus QC team | 3 | Not Started |  | 2026-09-11 | 2026-09-11 |  |  |  | 1.0 |  | 61.0 |  |  | Hypercare | 458 |
| 461 | End-to-End UAT | 2 | Not Started |  | 2026-09-15 | 2026-09-23 |  |  |  | 7.0 |  | 53.0 |  |  | Hypercare |  |
| 462 | UAT of End-to-end system - eProc & eInvoice | 3 | Not Started |  | 2026-09-15 | 2026-09-21 |  |  |  | 5.0 |  | 55.0 |  |  | Hypercare | 455 |
| 463 | Defect Analysis & UAT Feedback incorporation and share Test Closure Memo | 3 | Not Started |  | 2026-09-16 | 2026-09-22 |  |  |  | 5.0 | True | 0.0 |  |  | Hypercare |  |
| 464 | Titan to provide sign off on Test Closure Memo | 3 | Not Started |  | 2026-09-23 | 2026-09-23 |  |  |  | 1.0 | True | 0.0 |  |  | Hypercare | 462 |
| 465 | Migration of Solution from UAT to PRODUCTION | 2 | Not Started | 0.0 | 2026-09-24 | 2026-10-09 | 2026-07-20 | 2026-08-05 | -41 | 12.0 |  | 41.0 |  | Yellow | Hypercare |  |
| 466 | Log ticket for PRODUCTION tenant creation (Starting with SSO sign off on STAGING) | 3 | Not Started | 0.0 | 2026-09-24 | 2026-09-24 | 2026-07-23 | 2026-07-23 | -41 | 1.0 |  | 45.0000001042 | Zycus Product Specialist | Yellow | Hypercare | 463 |
| 467 | iSupplier is PROD Ready with Supplier Bulk upload on PRODUCTION | 3 | Not Started | 0.0 | 2026-09-25 | 2026-09-25 | 2026-07-28 | 2026-07-28 | -41 | 1.0 |  | 45.0000000694 | Zycus Consultant, Zycus Product Specialist | Yellow | Hypercare | 465 |
| 468 | ZSN & P2P configuration for catalog uploads by Titan/Supplier | 3 | Not Started | 0.0 | 2026-09-28 | 2026-09-30 | 2026-07-24 | 2026-07-28 | -41 | 3.0 |  | 48.0 | Zycus Product Specialist | Yellow | Hypercare | 466 |
| 469 | Titan to provide refreshed Master data for PRODUCTION | 3 | Not Started | 0.0 | 2026-09-24 | 2026-09-28 | 2026-07-20 | 2026-07-22 | -41 | 3.0 |  | 50.0 | Titan Project Team | Yellow | Hypercare | 463 |
| 470 | Zycus validation and data iterations | 3 | Not Started | 0.0 | 2026-09-28 | 2026-09-30 | 2026-07-23 | 2026-07-27 | -41 | 3.0 |  | 45.0000000347 | Zycus Product Specialist | Yellow | Hypercare | 466 |
| 471 | Titan to move integration code to PRODUCTION environment | 3 | Not Started | 0.0 | 2026-10-01 | 2026-10-05 | 2026-07-23 | 2026-07-27 | -41 | 3.0 |  | 45.0 | Titan Project Team | Yellow | Hypercare | 469 |
| 472 | Setup PRODUCTION environment (master data) - Zycus | 3 | Not Started | 0.0 | 2026-09-24 | 2026-09-30 | 2026-07-28 | 2026-08-03 | -41 | 5.0 |  | 48.0 | Zycus Product Specialist | Yellow | Hypercare | 463 |
| 473 | Setup PRODUCTION environment (configuration) - Zycus | 3 | Not Started | 0.0 | 2026-09-24 | 2026-09-30 | 2026-07-28 | 2026-08-03 | -41 | 5.0 |  | 48.0 | Zycus Product Specialist | Yellow | Hypercare | 463 |
| 474 | Setup PRODUCTION environment (Integration) - Zycus | 3 | Not Started | 0.0 | 2026-09-24 | 2026-09-30 | 2026-07-24 | 2026-07-30 | -41 | 5.0 | True | 0.0 | Zycus Product Specialist | Yellow | Hypercare | 463 |
| 475 | Quality Check | 3 | Not Started | 0.0 | 2026-10-01 | 2026-10-09 | 2026-07-28 | 2026-08-05 | -41 | 7.0 |  | 41.0 |  | Yellow | Hypercare |  |
| 476 | Schedule for quality check | 4 | Not Started | 0.0 | 2026-10-01 | 2026-10-01 | 2026-07-28 | 2026-07-28 | -41 | 1.0 | True | 0.0 | Zycus Product Specialist | Yellow | Hypercare | 473 |
| 477 | Perform quality checks, PSRs as per quality checklist and submit to QC team | 4 | Not Started | 0.0 | 2026-10-02 | 2026-10-08 | 2026-08-04 | 2026-08-04 | -41 | 5.0 | True | 0.0 | Zycus Product Specialist | Yellow | Hypercare | 475 |
| 478 | Quality Check by Zycus QC team | 4 | Not Started | 0.0 | 2026-10-09 | 2026-10-09 | 2026-08-05 | 2026-08-05 | -41 | 1.0 | True | 0.0 | Zycus Quality Team | Yellow | Hypercare | 476 |
| 479 | Training | 2 | Not Started | 0.0 | 2026-10-12 | 2026-10-20 | 2026-08-03 | 2026-08-07 | -38 | 7.0 |  | 34.0 |  | Yellow | Hypercare |  |
| 480 | eProc Training (Train the Trainer) | 3 | Not Started | 0.0 | 2026-10-12 | 2026-10-15 | 2026-08-03 | 2026-08-06 | -36 | 4.0 |  | 34.0000000694 | Titan Project Manager, Titan Project Team, Zycus University Trainer | Yellow | Hypercare | 477 |
| 481 | eInvoice Training (Train the Trainer) | 3 | Not Started | 0.0 | 2026-10-16 | 2026-10-19 | 2026-08-03 | 2026-08-04 | -40 | 2.0 |  | 34.0000000347 | Titan Project Manager, Titan Project Team, Zycus University Trainer | Yellow | Hypercare | 479 |
| 482 | Admin Training | 3 | Not Started | 0.0 | 2026-10-20 | 2026-10-20 | 2026-08-07 | 2026-08-07 | -38 | 1.0 |  | 34.0 | Titan Project Manager, Titan Project Team, Zycus University Trainer | Yellow | Hypercare | 480 |
| 483 | P2P Cutover | 1 | Not Started | 0.0 | 2026-10-12 | 2026-12-07 | 2026-07-13 | 2026-08-07 | -62 | 41.0 |  | 0.0 |  | Yellow | Hypercare |  |
| 484 | First Go-Live communication to all suppliers | 2 | Not Started | 0.0 | 2026-10-12 | 2026-10-13 | 2026-07-13 | 2026-07-13 | -59 | 2.0 | True | 0.0 | Titan Project Team | Yellow | Hypercare | 477 |
| 485 | Share updated P2P user list | 2 | Not Started | 0.0 | 2026-10-12 | 2026-10-13 | 2026-07-27 | 2026-07-27 | -51 | 2.0 |  | 39.0 | Titan Project Team | Yellow | Hypercare | 477 |
| 486 | Second Go-Live communication to all suppliers | 2 | Not Started | 0.0 | 2026-10-14 | 2026-10-15 | 2026-07-27 | 2026-07-27 | -53 | 2.0 | True | 0.0 | Titan Project Team | Yellow | Hypercare | 483 |
| 487 | Close all requisitions/PO/invoices in existing system | 2 | Not Started | 0.0 | 2026-10-16 | 2026-10-22 | 2026-08-06 | 2026-08-06 | -50 | 5.0 | True | 0.0 | Titan Project Team | Yellow | Hypercare | 485 |
| 488 | Supplier/Titan to load catalogues on ZSN | 2 | Not Started | 0.0 | 2026-10-23 | 2026-10-29 | 2026-08-06 | 2026-08-07 | -54 | 5.0 | True | 0.0 | Titan Project Team | Yellow | Hypercare | 486 |
| 489 | Load delta master data via integration | 2 | Not Started | 0.0 | 2026-10-30 | 2026-11-05 | 2026-07-31 | 2026-08-03 | -63 | 5.0 | True | 0.0 | Titan Integration Team | Yellow | Hypercare | 487 |
| 490 | Titan Quality Check | 2 | Not Started | 0.0 | 2026-11-06 | 2026-11-06 | 2026-08-05 | 2026-08-05 | -63 | 1.0 | True | 0.0 | Titan Project Team | Yellow | Hypercare | 488 |
| 491 | Go Live | 2 | Not Started | 0.0 | 2026-11-09 | 2026-11-09 | 2026-08-10 | 2026-08-10 | -61 | 1.0 |  | 20.0 |  | Yellow | Hypercare |  |

| row_number | name | level | status | percent_complete | start_date | end_date | baseline_start | baseline_finish | variance_days | duration_days | critical | total_float | assigned_to | rag_raw | phase_name | predecessors |
| --- | --- | --- | --- | --- | --- | --- | --- | --- | --- | --- | --- | --- | --- | --- | --- | --- |
| 492 | Release P2P to all users requiring access for Pilot launch | 3 | Not Started | 0.0 | 2026-11-09 | 2026-11-09 | 2026-08-10 | 2026-08-10 | -61 | 1.0 | True | 0.0 | Titan Project Manager, Titan Project Team, Zycus Product Specialist | Yellow | Hypercare | 489 |
| 493 | Hypercare | 2 | Not Started |  | 2026-11-10 | 2026-12-07 |  |  |  | 20.0 |  | 0.0 |  | Yellow | Hypercare |  |
| 494 | Hypercare Support | 3 | Not Started |  | 2026-11-10 | 2026-12-07 |  |  |  | 20.0 | True | 0.0 |  |  | Hypercare | 491 |
