| row_number | name | status | percent_complete | start_date | end_date | baseline_start | baseline_finish | variance_days | duration_days | total_float | critical | assigned_to | predecessors |
| --- | --- | --- | --- | --- | --- | --- | --- | --- | --- | --- | --- | --- | --- |
| 2 | Zycus - UniSan S2P Implementation | In Progress | 0.44 | 2026-02-11 | 2026-10-09 | 2026-05-03 | 2026-05-20 | -2 | 170.0 | 0.0 |  |  |  |
| 3 | Contract Sign Off | Completed | 1.0 | 2026-02-11 | 2026-02-11 |  |  |  | 1.0 | 169.0 |  |  |  |
| 4 | Contract signing between UniSan and Zycus | Completed | 1.0 | 2026-02-11 | 2026-02-11 |  |  |  | 1.0 | 0.0 | True | UniSan Project Sponsor, Zycus Sales |  |
| 5 | Contract Sign Off | Completed | 1.0 | 2026-02-11 | 2026-02-11 |  |  |  | 0.0 | 169.0 |  |  | 3 |
| 6 | Project Initiation and Data Gathering | Completed | 1.0 | 2026-02-19 | 2026-03-17 |  |  |  | 18.0 | 146.0 |  |  |  |
| 7 | Project Kick Off | Completed | 1.0 | 2026-02-19 | 2026-03-10 |  |  |  | 13.0 | 151.0 |  |  |  |
| 8 | Review Contract Scope | Completed | 1.0 | 2026-02-23 | 2026-02-23 |  |  |  | 1.0 | 158.0000000694 |  | Zycus Project Resources Manager | 3FS +7d |
| 9 | Assign Project Team and Internal communication | Completed | 1.0 | 2026-02-23 | 2026-02-23 |  |  |  | 1.0 | 0.0 | True | Zycus Project Resources Manager | 3FS +7d |
| 10 | Zycus Project Team mobilization and Team alignment | Completed | 1.0 | 2026-02-19 | 2026-02-23 |  |  |  | 3.0 | 0.0 | True | Zycus Project Resources Manager | 8FF |
| 11 | Setup Project [Server, Email alias, Internal Applications, Central Drive, Internal ticket for STAGING Set Up] | Completed | 1.0 | 2026-02-24 | 2026-03-05 |  |  |  | 7.0 | 0.0 | True | Zycus Project Team | 9 |
| 12 | Sales / PreSales / Pilots handover | Completed | 1.0 | 2026-02-24 | 2026-02-25 |  |  |  | 2.0 | 158.0000000347 |  | Zycus Project Manager, Zycus Project Team, Zycus Sales | 7 |
| 13 | Pre-kick off meeting with internal stakeholders | Completed | 1.0 | 2026-02-26 | 2026-02-26 |  |  |  | 1.0 | 158.0 |  | Zycus Project Manager, Zycus Project Team, Zycus Sales | 11 |
| 14 | Finalize kick off meeting schedule | Completed | 1.0 | 2026-02-23 | 2026-02-23 |  |  |  | 1.0 | 157.0000000694 |  | UniSan Project Manager, UniSan Project Sponsor, Zycus Sales |  |
| 15 | Review SOW with UniSan | Completed | 1.0 | 2026-02-24 | 2026-02-24 |  |  |  | 1.0 | 160.0 |  | UniSan Project Sponsor, Zycus Project Manager |  |
| 16 | Kick off meeting [Introduction Meeting] | Completed | 1.0 | 2026-02-24 | 2026-02-24 |  |  |  | 1.0 | 157.0000000694 |  | UniSan Core Project Team, UniSan Project Manager, Zycus Consultant, Zycus Product Specialist, Zycus Project Manager, Zycus Project Team | 13 |
| 17 | Share Product specific templates [Questionnaire, User Details template, Legacy Data Upload] with UniSan | Completed | 1.0 | 2026-02-25 | 2026-02-25 |  |  |  | 1.0 | 157.0000000347 |  | Zycus Product Specialist, Zycus Project Manager | 15 |
| 18 | Setup Value Introduction kick-off call | Completed | 1.0 | 2026-03-09 | 2026-03-10 |  |  |  | 2.0 | 151.0 |  | UniSan Project Group, Zycus Product Specialist, Zycus Project Manager | 16FS +6d |
| 19 | Zycus Project Set-Up | Completed | 1.0 | 2026-03-05 | 2026-03-05 |  |  |  | 0.0 | 154.0 |  |  | 10 |
| 20 | Kick-off Meeting | Completed | 1.0 | 2026-02-24 | 2026-02-24 |  |  |  | 0.0 | 160.0 |  |  | 15 |
| 21 | Implementation Questionnaire and Staging Setup | Completed | 1.0 | 2026-03-06 | 2026-03-17 |  |  |  | 8.0 | 146.0 |  |  |  |
| 22 | STAGING Set Up | Completed | 1.0 | 2026-03-06 | 2026-03-13 |  |  |  | 6.0 | 148.0 |  |  |  |
| 23 | Company creation on Zycus STAGING environment | Completed | 1.0 | 2026-03-06 | 2026-03-09 |  |  |  | 2.0 | 0.0 | True | Zycus Product Specialist | 10 |
| 24 | NFR (Non-Functional Requirement) Finalization and sign-off | Completed | 1.0 | 2026-03-06 | 2026-03-06 |  |  |  | 1.0 | 153.0 |  | UniSan Core Project Team, Zycus Project Team | 10 |
| 25 | Configure staging setup with base configuration | Completed | 1.0 | 2026-03-10 | 2026-03-12 |  |  |  | 3.0 | 0.0 | True | Zycus Product Specialist | 22 |
| 26 | Value Definition Discussion | Completed | 1.0 | 2026-03-10 | 2026-03-11 |  |  |  | 2.0 | 147.0000000694 |  | UniSan Project Group, Zycus Product Specialist, Zycus Project Manager | 22 |
| 27 | Value Definition Review and Follow-up | Completed | 1.0 | 2026-03-12 | 2026-03-13 |  |  |  | 2.0 | 147.0000000347 |  | UniSan Project Group, Zycus Product Specialist, Zycus Project Manager | 25 |
| 28 | Value Definition Sign-off | Completed | 1.0 | 2026-03-13 | 2026-03-13 |  |  |  | 0.0 | 147.0000000347 |  | UniSan Project Group, Zycus Product Specialist, Zycus Project Manager | 26 |
| 29 | Quality Reviews | Completed | 1.0 | 2026-03-13 | 2026-03-17 |  |  |  | 3.0 | 146.0 |  |  |  |
| 30 | Schedule quality toll | Completed | 1.0 | 2026-03-13 | 2026-03-13 |  |  |  | 1.0 | 123.0000003125 |  | Zycus Product Specialist | 24 |
| 31 | Perform quality checks, PSRs as per quality checklist and submit to QC team | Completed | 1.0 | 2026-03-16 | 2026-03-16 |  |  |  | 1.0 | 123.0000002778 |  | Zycus Product Specialist | 29 |
| 32 | Quality Check by Zycus QC team | Completed | 1.0 | 2026-03-17 | 2026-03-17 |  |  |  | 1.0 | 123.0000002431 |  | Zycus Quality Team | 30 |
| 33 | Implementation Questionnaire and Staging Setup | Completed | 1.0 | 2026-03-17 | 2026-03-17 |  |  |  | 0.0 | 123.0000002083 |  |  | 31 |
| 34 | Configuration Validation & Documentation | Completed | 1.0 | 2026-03-13 | 2026-04-27 |  |  |  | 32.0 | 117.0 |  |  |  |
| 35 | Requirement Workshop | Completed | 1.0 | 2026-03-13 | 2026-04-27 |  |  |  | 32.0 | 117.0 |  |  |  |
| 36 | CLM Configuration Documentation Workshop | Completed | 1.0 | 2026-03-13 | 2026-04-17 |  |  |  | 26.0 | 0.0 | True | UniSan Project Team, UniSan SME, Zycus Project Team | 24 |
| 37 | iSupplier Configuration Documentation Workshop | Completed | 1.0 | 2026-03-13 | 2026-04-15 |  |  |  | 24.0 | 4.0000002778 |  | UniSan Project Team, UniSan SME, Zycus Project Team | 24 |
| 38 | Integration Configuration Documentation Workshop | Completed | 1.0 | 2026-04-24 | 2026-04-27 |  |  |  | 2.0 | 117.0 |  | UniSan Project Team, UniSan SME, Zycus Project Team | #REF, #REF |
| 39 | Configuration Documentation | Completed | 1.0 | 2026-03-16 | 2026-04-22 |  |  |  | 28.0 | 120.0 |  |  |  |
| 40 | iContract Documentation with Merlin | Completed | 1.0 | 2026-04-20 | 2026-04-20 |  |  |  | 1.0 | 0.0 | True | UniSan Core Project Team, UniSan Project Manager, Zycus Merlin Product Team, Zycus Project Manager, Zycus Project Team | 35 |
| 41 | iSupplier Configuration Documentation | Completed | 1.0 | 2026-04-16 | 2026-04-16 |  |  |  | 1.0 | 4.0000002778 |  | UniSan Core Project Team, UniSan Project Manager, Zycus Merlin Product Team, Zycus Project Manager, Zycus Project Team | 36 |
| 42 | IAD Review for iSupplier and iContract | Completed | 1.0 | 2026-04-21 | 2026-04-21 |  |  |  | 1.0 | 0.0 | True | UniSan Project Manager | 39, 40 |
| 43 | UniSan to review and Sign-off IAD Draft- iSupplier and iContract | Completed | 1.0 | 2026-04-22 | 2026-04-22 |  |  |  | 1.0 | 0.0 | True |  | 41 |
| 44 | Value Realization Target Discussion | Completed | 1.0 | 2026-03-16 | 2026-03-16 |  |  |  | 1.0 | 147.0 |  | UniSan Project Group, Zycus Product Specialist, Zycus Project Manager | 27, #REF |
| 45 | Configuration Documentation concluded | Completed | 1.0 | 2026-04-22 | 2026-04-22 |  |  |  | 0.0 | 120.0 |  |  | 38 |
| 46 | First draft IAD Sign-off | Completed | 1.0 | 2026-04-22 | 2026-04-22 |  |  |  | 0.0 | 120.0 |  |  | 42 |
| 47 | Single Sign On and User details Integration | Completed | 1.0 | 2026-03-13 | 2026-04-16 |  |  |  | 25.0 | 124.0 |  |  |  |
| 48 | Single Sign On - SSO | Completed | 1.0 | 2026-03-13 | 2026-04-16 |  |  |  | 25.0 | 124.0 |  |  |  |
| 49 | Availability of Technical Team from Customer | Completed | 1.0 | 2026-03-13 | 2026-03-13 |  |  |  | 1.0 | 123.0000002083 |  | UniSan Project Manager | 24 |
| 50 | Design and Analysis | Completed | 1.0 | 2026-03-18 | 2026-04-10 |  |  |  | 18.0 | 128.0 |  |  |  |
| 51 | Zycus to share Process flow of SSO integration | Completed | 1.0 | 2026-03-18 | 2026-03-18 |  |  |  | 1.0 | 123.0000001736 |  | Zycus SSO Team | 48, 32 |
| 52 | Exchange of configuration files | Completed | 1.0 | 2026-03-19 | 2026-03-19 |  |  |  | 1.0 | 144.0 |  | UniSan IT Team, Zycus SSO Team | 50 |
| 53 | Exchange of certificates to be used | Completed | 1.0 | 2026-03-19 | 2026-04-10 |  |  |  | 17.0 | 128.0 |  | UniSan IT Team, Zycus SSO Team | 50 |
| 54 | Approach to be used for Single Sign On [Claims/Email Address etc.] | Completed | 1.0 | 2026-03-19 | 2026-04-10 |  |  |  | 17.0 | 123.0000001389 |  | UniSan IT Team, Zycus SSO Team | 50 |
| 55 | Configuration and Review | Completed | 1.0 | 2026-04-13 | 2026-04-16 |  |  |  | 4.0 | 124.0 |  |  |  |
| 56 | Development [STAGING] Environment | Completed | 1.0 | 2026-04-13 | 2026-04-16 |  |  |  | 4.0 | 124.0 |  |  |  |
| 57 | Registration of Service Provider URL for client | Completed | 1.0 | 2026-04-13 | 2026-04-13 |  |  |  | 1.0 | 127.0 |  | Zycus SSO Team | 53 |
| 58 | Registration TMS URL specific to client | Completed | 1.0 | 2026-04-13 | 2026-04-13 |  |  |  | 1.0 | 123.0000001042 |  | Zycus SSO Team | 53 |
| 59 | Configuration of Web Server for service Provider application | Completed | 1.0 | 2026-04-14 | 2026-04-14 |  |  |  | 1.0 | 126.0 |  | Zycus SSO Team | 57 |
| 60 | Service Provider application deployment for client and sanity of the deployed setup | Completed | 1.0 | 2026-04-14 | 2026-04-14 |  |  |  | 1.0 | 126.0 |  | Zycus SSO Team | 57 |
| 61 | Configuration of Service Provider setup using below mentioned files | Completed | 1.0 | 2026-04-14 | 2026-04-14 |  |  |  | 1.0 | 123.0000000694 |  | Zycus SSO Team | 57 |
| 62 | Issue Resolution, if any | Completed | 1.0 | 2026-04-15 | 2026-04-16 |  |  |  | 2.0 | 123.0000000347 |  | Zycus SSO Team | 60 |
| 63 | Sign off of SSO on STAGING Environment | Completed | 1.0 | 2026-04-16 | 2026-04-16 |  |  |  | 1.0 | 124.0 |  | UniSan IT Team | 61FF |
| 64 | SSO: Completion of Design & Analysis | Completed | 1.0 | 2026-04-10 | 2026-04-10 |  |  |  | 0.0 | 128.0 |  |  | 49 |
| 65 | SSO: Completion of Development and Testing | Completed | 1.0 | 2026-04-16 | 2026-04-16 |  |  |  | 0.0 | 124.0 |  |  | 62 |
| 66 | Contract Management with Basic Setup | Completed | 1.0 | 2026-04-23 | 2026-05-05 |  |  |  | 8.0 | 112.0 |  |  |  |
| 67 | iContract Deployment (Repository + Authoring) | Completed | 1.0 | 2026-04-23 | 2026-05-05 |  |  |  | 8.0 | 112.0 |  |  |  |
| 68 | Functional Configuration on STAGING set Up | Completed | 1.0 | 2026-04-23 | 2026-05-05 |  |  |  | 8.0 | 112.0 |  |  |  |
| 69 | User Role Configuration | Completed | 1.0 | 2026-04-23 | 2026-04-23 |  |  |  | 1.0 | 4.0000002778 |  | Zycus Product Specialist | 42 |
| 70 | Admin Settings Configuration | Completed | 1.0 | 2026-04-24 | 2026-04-24 |  |  |  | 1.0 | 118.0 |  | Zycus Product Specialist | 68 |
| 71 | Readiness for Pre-UAT | Completed | 1.0 | 2026-04-24 | 2026-04-24 |  |  |  | 1.0 | 4.0000002778 |  | Zycus Product Specialist | 68 |

| row_number | name | status | percent_complete | start_date | end_date | duration_days | total_float | critical | assigned_to | predecessors |
| --- | --- | --- | --- | --- | --- | --- | --- | --- | --- | --- |
| 72 | Pre-UAT | Completed | 1.0 | 2026-04-27 | 2026-05-05 | 6.0 | 112.0 |  |  |  |
| 73 | Pre-UAT - Provide End to end walkthrough of configured iContract to UniSan | Completed | 1.0 | 2026-04-27 | 2026-04-28 | 2.0 | 4.0000002778 |  | UniSan Core Project Team, Zycus Consultant, Zycus Product Specialist | 70 |
| 74 | Provide feedback - if any for iContract configuration | Completed | 1.0 | 2026-04-29 | 2026-04-30 | 2.0 | 4.0000002778 |  | UniSan Project Team | 72 |
| 75 | Zycus to incorporate feedback - as applicable and share final version of Implementation Approach Document [IAD] | Completed | 1.0 | 2026-04-30 | 2026-05-04 | 2.0 | 4.0000002778 |  | Zycus Consultant, Zycus Product Specialist | 73SS +1d |
| 76 | Sign off on Pre-UAT and final version of IAD sign off | Completed | 1.0 | 2026-05-04 | 2026-05-04 | 0.0 | 4.0000002778 |  | UniSan Project Manager | 74 |
| 77 | WordConnect Installation at UniSan's end | Completed | 1.0 | 2026-05-04 | 2026-05-05 | 2.0 | 112.0 |  | UniSan IT Team, UniSan Project Manager | 73SS +2d |
| 78 | iContract: Conclude Functional Configuration | Completed | 1.0 | 2026-05-04 | 2026-05-04 | 0.0 | 113.0 |  |  | 75 |
| 79 | Supplier Information Management with Integration | Completed | 1.0 | 2026-04-23 | 2026-05-15 | 16.0 | 104.0 |  |  |  |
| 80 | iSupplier Deployment | Completed | 1.0 | 2026-04-23 | 2026-05-06 | 9.0 | 111.0 |  |  |  |
| 81 | Design & Development on STAGING Set UP | Completed | 1.0 | 2026-04-23 | 2026-05-06 | 9.0 | 111.0 |  |  |  |
| 82 | Users,Roles,Workflow & View Definition Configuration | Completed | 1.0 | 2026-04-23 | 2026-04-28 | 4.0 | 106.0000001042 |  |  |  |
| 83 | Configure User Roles, View Definition and Workflow as per IAD | Completed | 1.0 | 2026-04-23 | 2026-04-27 | 3.0 | 0.0 | True | Zycus Product Specialist | 42 |
| 84 | UniSan to provide feedback | Completed | 1.0 | 2026-04-28 | 2026-04-28 | 1.0 | 0.0 | True | UniSan Core Project Team, UniSan Subject Matter Expert | 82 |
| 85 | Pre-UAT on STAGING Set UP | Completed | 1.0 | 2026-04-29 | 2026-05-06 | 5.0 | 4.0000002778 |  |  |  |
| 86 | Pre-UAT - Provide End to end walkthrough of configured iSupplier to UniSan | Completed | 1.0 | 2026-04-29 | 2026-04-30 | 2.0 | 0.0 | True | Zycus Consultant, Zycus Product Specialist | 81 |
| 87 | Provide feedback - if any for iSupplier configuration | Completed | 1.0 | 2026-05-04 | 2026-05-04 | 1.0 | 0.0 | True | UniSan Project Team | 85 |
| 88 | Zycus to incorporate feedback - as applicable and share final version of Implementation Approach Document [IAD] | Completed | 1.0 | 2026-05-05 | 2026-05-06 | 2.0 | 109.0000000694 |  | Zycus Consultant | 85, 86 |
| 89 | Sign off on Pre-UAT and final version of IAD | Completed | 1.0 | 2026-05-06 | 2026-05-06 | 0.0 | 109.0000000694 |  | UniSan Project Manager, Zycus Project Manager | 87 |
| 90 | iSupplier: Conclude Functional Configuration | Completed | 1.0 | 2026-05-06 | 2026-05-06 | 0.0 | 4.0000002778 |  |  | 84 |
| 91 | Value KPI Report creation on Staging | Completed | 1.0 | 2026-05-07 | 2026-05-08 | 2.0 | 105.0000000694 |  | UniSan Project Group, Zycus Product Specialist, Zycus Project Manager | 94, 81, #REF |
| 92 | Value KPI Report demo on Staging | Completed | 1.0 | 2026-05-14 | 2026-05-15 | 2.0 | 102.0000000347 |  | UniSan Project Group, Zycus Product Specialist, Zycus Project Manager | 90SS +5d |
| 93 | User Acceptance Testing (UAT) Phase I | Completed | 1.0 | 2026-05-04 | 2026-05-20 | 13.0 | 101.0 |  |  |  |
| 94 | Prepare for UAT | Completed | 1.0 | 2026-05-04 | 2026-05-13 | 8.0 | 4.0000002778 |  |  |  |
| 95 | Prepare the UAT Approach | Completed | 1.0 | 2026-05-04 | 2026-05-05 | 2.0 | 107.0000001042 |  | Zycus Product Specialist, Zycus Project Manager | 85 |
| 96 | Finalize and agree on UAT Approach | Completed | 1.0 | 2026-05-06 | 2026-05-06 | 1.0 | 107.0000000694 |  | UniSan Core Project Team, UniSan Project Manager | 94 |
| 97 | Provide users & roles on STAGING required for UAT | Completed | 1.0 | 2026-05-05 | 2026-05-08 | 4.0 | 0.0 | True | UniSan Project Manager, UniSan Project Team, UniSan SME | 86 |
| 98 | Create users on STAGING set for UAT group | Completed | 1.0 | 2026-05-11 | 2026-05-13 | 3.0 | 0.0 | True | Zycus Product Specialist | 96 |
| 99 | Provide Standard Test Cases | Completed | 1.0 | 2026-05-07 | 2026-05-08 | 2.0 | 107.0000000347 |  | Zycus Consultant, Zycus Product Specialist | 95 |
| 100 | Finalize Test Cases | Completed | 1.0 | 2026-05-11 | 2026-05-12 | 2.0 | 107.0 |  | UniSan Core Project Team | 98 |
| 101 | Quality Reviews | Completed | 1.0 | 2026-05-07 | 2026-05-08 | 2.0 | 109.0 |  |  |  |
| 102 | Schedule for quality check | Completed | 1.0 | 2026-05-07 | 2026-05-07 | 1.0 | 109.0000000347 |  | Zycus Product Specialist | 88, 75 |
| 103 | Perform quality checks, PSRs as per quality checklist and submit to QC team | Completed | 1.0 | 2026-05-08 | 2026-05-08 | 1.0 | 109.0 |  | Zycus Product Specialist | 101 |
| 104 | Quality Check by Zycus QC team | Completed | 1.0 | 2026-05-08 | 2026-05-08 | 0.0 | 109.0 |  | Zycus Quality Team | 102 |
| 105 | End-to-End UAT | Completed | 1.0 | 2026-05-14 | 2026-05-20 | 5.0 | 101.0 |  |  |  |
| 106 | UAT for iContract and iSupplier | Completed | 1.0 | 2026-05-14 | 2026-05-18 | 3.0 | 0.0 | True | UniSan Core Project Team | 93, 89, 75 |
| 107 | Defect Analysis & UAT Feedback incorporation and share Test Closure Memo | Completed | 1.0 | 2026-05-14 | 2026-05-19 | 4.0 | 0.0 | True | Zycus Project Team | 105SS |
| 108 | UniSan to provide sign off on Test Closure Memo | Completed | 1.0 | 2026-05-20 | 2026-05-20 | 1.0 | 0.0 | True | UniSan Core Project Team, UniSan Project Manager | 106 |
| 109 | UAT Completion I | Completed | 1.0 | 2026-05-20 | 2026-05-20 | 0.0 | 69.0000002431 |  |  | 107 |
| 110 | Value KPI Sign-off | Completed | 1.0 | 2026-05-18 | 2026-05-18 | 0.0 | 101.0000000347 |  | UniSan Project Group, Zycus Product Specialist, Zycus Project Manager | 91, 105 |
| 111 | Training Phase I | In Progress | 0.77 | 2026-05-19 | 2026-05-28 | 7.0 | 96.0 |  |  |  |
| 112 | Training Preparation | Completed | 1.0 | 2026-05-19 | 2026-05-21 | 3.0 | 100.0 |  |  |  |
| 113 | Training Approach and Schedule finalization | Completed | 1.0 | 2026-05-19 | 2026-05-20 | 2.0 | 96.0000001042 |  | UniSan Project Manager, Zycus Project Manager, Zycus University | 105 |
| 114 | Training Agenda Finalization | Completed | 1.0 | 2026-05-21 | 2026-05-21 | 1.0 | 96.0000000694 |  | UniSan Project Manager, Zycus University Trainer | 112 |
| 115 | Train The Trainer | In Progress | 0.6 | 2026-05-22 | 2026-05-28 | 4.0 | 96.0 |  |  |  |
| 116 | iContract + Merlin for Contract Training | Completed | 1.0 | 2026-05-22 | 2026-05-25 | 2.0 | 96.0000000347 |  | UniSan Project Team, Zycus University Trainer | 107, 113 |
| 117 | iSupplier Training | Completed | 1.0 | 2026-05-26 | 2026-05-26 | 1.0 | 97.0 |  | UniSan Project Team, Zycus University Trainer | 115 |
| 118 | Admin Training | Not Started | 0.0 | 2026-05-26 | 2026-05-28 | 2.0 | 96.0 |  | UniSan Project Team, Zycus University Trainer | 115 |
| 119 | Training Completion | Completed | 1.0 | 2026-05-28 | 2026-05-28 | 0.0 | 96.0 |  |  | 117 |
| 120 | Production Migration Phase I | Completed | 1.0 | 2026-05-19 | 2026-06-03 | 11.0 | 92.0 |  |  |  |
| 121 | Migration of Solution from STAGING Environment to PRODUCTION | Completed | 1.0 | 2026-05-19 | 2026-06-03 | 11.0 | 92.0 |  |  |  |
| 122 | Log ticket for PRODUCTION tenant creation | Completed | 1.0 | 2026-05-19 | 2026-05-19 | 1.0 | 91.0000000694 |  | Zycus Product Specialist | 105 |
| 123 | Configuration migration to PRODUCTION for iContract & iSupplier | Completed | 1.0 | 2026-05-21 | 2026-05-28 | 5.0 | 91.0000002083 |  | Zycus Product Specialist | 121, 107 |
| 124 | Provide the final list of users to be created on PRODUCTION | Completed | 1.0 | 2026-05-21 | 2026-05-25 | 3.0 | 69.0000002083 |  | UniSan Holdings SME, UniSan Project Manager, TKC Holdings Project Team | 108 |
| 125 | Creation of Specified Users as per roles | Completed | 1.0 | 2026-05-26 | 2026-06-01 | 4.0 | 69.0000001736 |  | Zycus Product Specialist | 123 |
| 126 | WordConnect Installation at UniSan's end | Completed | 1.0 | 2026-05-29 | 2026-06-01 | 2.0 | 94.0 |  | UniSan IT Team, UniSan Project Manager | 122 |
| 127 | Migration of SSO | Completed | 1.0 | 2026-05-25 | 2026-06-03 | 7.0 | 92.0 |  |  |  |
| 128 | PRODUCTION setup with standard configuration | Completed | 1.0 | 2026-05-25 | 2026-05-26 | 2.0 | 91.0000001736 |  | Zycus SSO Team | 122SS +2d |
| 129 | Exchange of certificates to be used | Completed | 1.0 | 2026-05-28 | 2026-05-28 | 1.0 | 95.0000000347 |  | UniSan IT Team, Zycus SSO Team | 127 |
| 130 | Registration of Service Provider URL for client | Completed | 1.0 | 2026-05-29 | 2026-05-29 | 1.0 | 95.0 |  | Zycus SSO Team | 128 |
| 131 | Registration TMS URL specific to client | Completed | 1.0 | 2026-05-28 | 2026-05-28 | 1.0 | 95.0000000347 |  | Zycus SSO Team | 127 |
| 132 | Configuration of Web Server for service Provider application | Completed | 1.0 | 2026-05-29 | 2026-05-29 | 1.0 | 95.0 |  | Zycus SSO Team | 130 |
| 133 | Service Provider application deployment for client and sanity of the deployed setup | Completed | 1.0 | 2026-05-29 | 2026-05-29 | 1.0 | 95.0 |  | Zycus SSO Team | 130 |
| 134 | Raise internal ticket for configuration of service provider set up & PRODUCTION URL Change | Completed | 1.0 | 2026-05-26 | 2026-05-26 | 1.0 | 92.0000001389 |  | Zycus SSO Team | 127FS -1d |
| 135 | Configuration of Service Provider setup | Completed | 1.0 | 2026-05-28 | 2026-05-29 | 2.0 | 92.0000001042 |  | Zycus SSO Team | 133 |
| 136 | PRODUCTION URL change | Completed | 1.0 | 2026-06-01 | 2026-06-02 | 2.0 | 93.0 |  |  |  |
| 137 | Configuring DSSO URL for all the respective product | Completed | 1.0 | 2026-06-01 | 2026-06-01 | 1.0 | 92.0000000694 |  | Zycus SSO Team | 134 |
| 138 | Testing of SSO login on PRODUCTION set up | Completed | 1.0 | 2026-06-02 | 2026-06-02 | 1.0 | 92.0000000347 |  | UniSan IT Team, TKC Holdings Project Team | 136 |
| 139 | Sign off on SSO Implementation | Completed | 1.0 | 2026-06-03 | 2026-06-03 | 1.0 | 92.0 |  | UniSan Project Manager | 137 |
| 140 | Quality Reviews | Completed | 1.0 | 2026-06-02 | 2026-06-03 | 2.0 | 92.0 |  |  |  |
| 141 | Schedule for quality check | Completed | 1.0 | 2026-06-02 | 2026-06-02 | 1.0 | 69.0000001389 |  | Zycus Product Specialist | 124 |

| row_number | name | status | percent_complete | start_date | end_date | duration_days | total_float | critical | assigned_to | predecessors |
| --- | --- | --- | --- | --- | --- | --- | --- | --- | --- | --- |
| 142 | Perform quality checks, PSRs as per quality checklist and submit to QC team | Completed | 1.0 | 2026-06-03 | 2026-06-03 | 1.0 | 69.0000001042 |  | Zycus Product Specialist | 140 |
| 143 | Quality Check by Zycus QC team | Completed | 1.0 | 2026-06-03 | 2026-06-03 | 0.0 | 69.0000001042 |  | Zycus Quality Team | 141 |
| 144 | KPI Reports to be migrated on PROD | Completed | 1.0 | 2026-05-29 | 2026-06-01 | 2.0 | 94.0 |  | UniSan Project Group, Zycus Product Specialist, Zycus Project Manager | 109, 122 |
| 145 | Sanity on Production for iContract and iSupplier | Completed | 1.0 | 2026-06-04 | 2026-06-05 | 2.0 | 69.0000000694 |  | UniSan IT Team, UniSan Integration Team, UniSan Project Manager, UniSan SME, UniSan Subject Matter Expert | 142 |
| 146 | Go /No-go Check Point ( Meeting with UniSan) for iContract & iSupplier | Completed | 1.0 | 2026-06-08 | 2026-06-08 | 1.0 | 69.0000000347 |  | UniSan Project Manager | 144 |
| 147 | Release Zycus system to all users for iContract and iSupplier | Completed | 1.0 | 2026-06-08 | 2026-06-08 | 0.0 | 69.0000000347 |  | Zycus Product Specialist | 145 |
| 148 | Production Go-Live Phase I | Completed | 1.0 | 2026-06-08 | 2026-06-08 | 0.0 | 69.0000000347 |  |  | 146 |
| 149 | Hypercare Phase I | In Progress | 0.25 | 2026-06-09 | 2026-07-06 | 20.0 | 69.0 |  | UniSan IT Team, UniSan Integration Team, UniSan Project Group, Zycus Consultant, Zycus Integration Team, Zycus Product Specialist, Zycus Project Manager | 147 |
| 150 | Configuration Validation & Documentation | In Progress | 0.26 | 2026-06-19 | 2026-07-22 | 24.0 | 57.0 |  |  |  |
| 151 | Requirement Workshop | In Progress | 0.51 | 2026-06-19 | 2026-07-15 | 19.0 | 62.0 |  |  |  |
| 152 | iSource Configuration Documentation Workshop | In Progress | 0.8 | 2026-06-29 | 2026-07-02 | 4.0 | 0.0 | True | UniSan Project Team, UniSan SME, Zycus Project Team | 152 |
| 153 | eProc, eInvoice and Merlin APSD Configuration Documentation Workshop | In Progress | 0.5 | 2026-06-19 | 2026-06-26 | 6.0 | 0.0 | True | UniSan Project Team, UniSan SME, Zycus Project Team | 107FS +20d |
| 154 | CLM Additional Approval Workflow Documentation Workshop | Not Started | 0.0 | 2026-07-03 | 2026-07-08 | 4.0 | 0.0 | True | UniSan Project Team, UniSan SME, Zycus Project Team | 151 |
| 155 | Merlin Intake Configuration Documentation Workshop | In Progress | 0.8 | 2026-07-09 | 2026-07-15 | 5.0 | 0.0 | True | UniSan Project Team, UniSan SME, Zycus Project Team | 153 |
| 156 | Integration Configuration Documentation Workshop ( eInovoice, iContract) | Not Started | 0.0 | 2026-07-03 | 2026-07-03 | 1.0 | 70.0 |  | UniSan Project Team, UniSan SME, Zycus Project Team | 151, 152 |
| 157 | Configuration Documentation | Not Started | 0.0 | 2026-06-29 | 2026-07-22 | 18.0 | 57.0 |  |  |  |
| 158 | iSource Configuration Documentation | Not Started | 0.0 | 2026-07-03 | 2026-07-03 | 1.0 | 70.0 |  | UniSan Core Project Team, UniSan Project Manager, Zycus Merlin Product Team, Zycus Project Manager, Zycus Project Team | 151 |
| 159 | eProc, eInvoice and Merlin APSD Configuration Documentation | Not Started | 0.0 | 2026-06-29 | 2026-06-29 | 1.0 | 23.0000001389 |  | UniSan Core Project Team, UniSan Project Manager, Zycus Merlin Product Team, Zycus Project Manager, Zycus Project Team | 152 |
| 160 | CLM Configuration Documentation | Not Started | 0.0 | 2026-07-09 | 2026-07-09 | 1.0 | 66.0 |  | UniSan Core Project Team, UniSan Project Manager, Zycus Merlin Product Team, Zycus Project Manager, Zycus Project Team | 153 |
| 161 | iSupplier Configuration Documentation | Not Started | 0.0 | 2026-07-09 | 2026-07-09 | 0.0 | 66.0 |  | UniSan Core Project Team, UniSan Project Manager, Zycus Merlin Product Team, Zycus Project Manager, Zycus Project Team | 159 |
| 162 | Merlin Intake Configuration Documentation | Not Started | 0.0 | 2026-07-16 | 2026-07-16 | 1.0 | 0.0 | True | UniSan Core Project Team, UniSan Project Manager, Zycus Merlin Product Team, Zycus Project Manager, Zycus Project Team | 154 |
| 163 | IAD Review for all modules | Not Started | 0.0 | 2026-07-17 | 2026-07-20 | 2.0 | 0.0 | True | UniSan Project Manager | 161 |
| 164 | UniSan to review and Sign-off IAD Draft | Not Started | 0.0 | 2026-07-21 | 2026-07-21 | 1.0 | 0.0 | True | UniSan Project Manager | 162 |
| 165 | Value Realization Target Discussion | Not Started | 0.0 | 2026-07-22 | 2026-07-22 | 1.0 | 57.0 |  | UniSan Project Group, Zycus Product Specialist, Zycus Project Manager | 163 |
| 166 | Configuration Documentation concluded | Not Started | 0.0 | 2026-07-22 | 2026-07-22 | 0.0 | 57.0 |  |  | 156 |
| 167 | First draft IAD Sign-off | Not Started | 0.0 | 2026-07-21 | 2026-07-21 | 0.0 | 58.0 |  |  | 163 |
| 168 | eProc and eInvoice and Merlin APSD | In Progress | 0.21 | 2026-06-19 | 2026-08-04 | 33.0 | 48.0 |  |  |  |
| 169 | eProc-einvoice Deployment | In Progress | 0.08 | 2026-07-02 | 2026-07-20 | 13.0 | 59.0 |  |  |  |
| 170 | Functional Configuration Finalization on STAGING set Up | In Progress | 0.08 | 2026-07-02 | 2026-07-20 | 13.0 | 59.0 |  |  |  |
| 171 | User Roles configuration | In Progress | 0.5 | 2026-07-02 | 2026-07-03 | 2.0 | 23.0000001389 |  | Zycus Product Specialist | 158FS +2d |
| 172 | Admin settings configuration | Not Started | 0.0 | 2026-07-06 | 2026-07-07 | 2.0 | 23.0000001389 |  | Zycus Product Specialist | 170 |
| 173 | Readiness for Pre-UAT | Not Started | 0.0 | 2026-07-08 | 2026-07-08 | 1.0 | 23.0000001389 |  | Zycus Product Specialist | 171 |
| 174 | Pre-UAT on STAGING | Not Started | 0.0 | 2026-07-09 | 2026-07-20 | 8.0 | 59.0 |  |  |  |
| 175 | Pre-UAT - Provide End to end walkthrough of configured eProc and eInvoice to the Customer | Not Started | 0.0 | 2026-07-09 | 2026-07-10 | 2.0 | 23.0000001389 |  | Zycus Consultant, Zycus Product Specialist | 172 |
| 176 | Provide feedback - if any for eProc configuration | Not Started | 0.0 | 2026-07-13 | 2026-07-15 | 3.0 | 23.0000001389 |  | UniSan Project Manager | 174 |
| 177 | Zycus to incorporate feedback - as applicable and share final version of Implementation Approach Document [IAD] | Not Started | 0.0 | 2026-07-16 | 2026-07-20 | 3.0 | 23.0000001389 |  | Zycus Consultant, Zycus Product Specialist | 174, 175 |
| 178 | Sign off on Pre-UAT and final version of IAD | Not Started | 0.0 | 2026-07-20 | 2026-07-20 | 0.0 | 21.0000001389 |  | UniSan Project Manager | 176 |
| 179 | eProc : Conclude Functional Configuration | Not Started | 0.0 | 2026-07-20 | 2026-07-20 | 0.0 | 23.0000001736 |  |  | 177 |
| 180 | Integrations eproc | In Progress | 0.47 | 2026-06-19 | 2026-07-09 | 15.0 | 66.0 |  |  |  |
| 181 | eProc Integration with SAP for Purchase order | In Progress | 0.47 | 2026-06-19 | 2026-07-09 | 15.0 | 66.0 |  |  |  |
| 182 | Integration Design | In Progress | 0.88 | 2026-06-19 | 2026-06-24 | 4.0 | 77.0 |  |  |  |
| 183 | Mapping activity for Integration | Completed | 1.0 | 2026-06-19 | 2026-06-22 | 2.0 | 24.0000000347 |  | UniSan Integration Team, Zycus Integration Specialist | 152FS -6d |
| 184 | Share TDD for interface | Completed | 1.0 | 2026-06-23 | 2026-06-23 | 1.0 | 61.0000001389 |  | Zycus Integration Lead | 182 |
| 185 | Review of TDD and share feedback with Zycus | In Progress | 0.5 | 2026-06-24 | 2026-06-24 | 1.0 | 61.0000001389 |  | UniSan Integration Team | 183 |
| 186 | Sign off on TDD | Not Started | 0.0 | 2026-06-24 | 2026-06-24 | 0.0 | 61.0000001389 |  | UniSan Integration Team | 184 |
| 187 | Development and Testing on STAGING Set Up | In Progress | 0.32 | 2026-06-25 | 2026-07-09 | 11.0 | 66.0 |  |  |  |
| 188 | Integration set up and development at Zycus | In Progress | 0.9 | 2026-06-29 | 2026-07-03 | 5.0 | 61.0000001389 |  | Zycus Integration Specialist | 185FS +2d |
| 189 | Integration development at UniSan - as applicable | Not Started | 0.0 | 2026-06-25 | 2026-07-01 | 5.0 | 61.0000001389 |  | UniSan Integration Team | 185 |
| 190 | Integration Unit Testing and Feedback Incorporation | Not Started | 0.0 | 2026-07-06 | 2026-07-06 | 1.0 | 61.0000001042 |  | Zycus Integration Team | 187, 188 |
| 191 | Systems Integration Testing | Not Started | 0.0 | 2026-07-07 | 2026-07-09 | 3.0 | 66.0 |  |  |  |
| 192 | SIT on STAGING Set Up | Not Started | 0.0 | 2026-07-07 | 2026-07-09 | 3.0 | 62.0000000694 |  | UniSan Integration Team, Zycus Integration Team | 189 |
| 193 | Sign off on SIT | Not Started | 0.0 | 2026-07-09 | 2026-07-09 | 1.0 | 66.0 |  | UniSan Integration Team | 191FF |
| 194 | eProc Integration: Completion of Design | Not Started | 0.0 | 2026-06-24 | 2026-06-24 | 0.0 | 77.0 |  |  | 181 |
| 195 | eProc Integration: Completion of Development and Testing | Not Started | 0.0 | 2026-07-09 | 2026-07-09 | 0.0 | 66.0 |  |  | 186 |
| 196 | eProc Integration: Completion of SIT | Not Started | 0.0 | 2026-07-09 | 2026-07-09 | 0.0 | 66.0 |  |  | 190 |
| 197 | Integrations ASN | In Progress | 0.42 | 2026-06-23 | 2026-07-14 | 16.0 | 63.0 |  |  |  |
| 198 | eProc Integration with SAP for Purchase order | In Progress | 0.42 | 2026-06-23 | 2026-07-14 | 16.0 | 63.0 |  |  |  |
| 199 | Integration Design | In Progress | 0.83 | 2026-06-23 | 2026-06-25 | 3.0 | 76.0 |  |  |  |
| 200 | Mapping activity for Integration | Completed | 1.0 | 2026-06-23 | 2026-06-23 | 1.0 | 24.0000000347 |  | UniSan Integration Team, Zycus Integration Specialist | 182 |
| 201 | Share TDD for interface | Completed | 1.0 | 2026-06-24 | 2026-06-24 | 1.0 | 24.0000000347 |  | Zycus Integration Lead | 199 |
| 202 | Review of TDD and share feedback with Zycus | In Progress | 0.5 | 2026-06-25 | 2026-06-25 | 1.0 | 66.0000000694 |  | UniSan Integration Team | 200 |
| 203 | Sign off on TDD | Not Started | 0.0 | 2026-06-25 | 2026-06-25 | 0.0 | 66.0000000694 |  | UniSan Integration Team | 201 |
| 204 | Development and Testing on STAGING Set Up | In Progress | 0.32 | 2026-06-26 | 2026-07-14 | 13.0 | 63.0 |  |  |  |
| 205 | Integration set up and development at Zycus | In Progress | 0.9 | 2026-06-26 | 2026-07-02 | 5.0 | 66.0000001042 |  | Zycus Integration Specialist | 202 |
| 206 | Integration development at UniSan - as applicable | Not Started | 0.0 | 2026-06-26 | 2026-07-02 | 5.0 | 66.0000001042 |  | UniSan Integration Team | 202 |
| 207 | Integration Unit Testing and Feedback Incorporation | Not Started | 0.0 | 2026-07-03 | 2026-07-03 | 1.0 | 66.0000000694 |  | Zycus Integration Team | 204, 205 |
| 208 | Systems Integration Testing | Not Started | 0.0 | 2026-07-10 | 2026-07-14 | 3.0 | 63.0 |  |  |  |
| 209 | SIT on STAGING Set Up | Not Started | 0.0 | 2026-07-10 | 2026-07-14 | 3.0 | 62.0000000347 |  | UniSan Integration Team, Zycus Integration Team | 206, 191 |
| 210 | Sign off on SIT | Not Started | 0.0 | 2026-07-14 | 2026-07-14 | 1.0 | 63.0 |  | UniSan Integration Team | 208FF |
| 211 | eProc Integration: Completion of Design | Not Started | 0.0 | 2026-06-25 | 2026-06-25 | 0.0 | 76.0 |  |  | 198 |

| row_number | name | status | percent_complete | start_date | end_date | duration_days | total_float | assigned_to | predecessors |
| --- | --- | --- | --- | --- | --- | --- | --- | --- | --- |
| 212 | eProc Integration: Completion of Development and Testing | Not Started | 0.0 | 2026-07-14 | 2026-07-14 | 0.0 | 63.0 |  | 203 |
| 213 | eProc Integration: Completion of SIT | Not Started | 0.0 | 2026-07-14 | 2026-07-14 | 0.0 | 63.0 |  | 207 |
| 214 | Integrations eInvoice | Not Started | 0.0 | 2026-07-01 | 2026-08-04 | 25.0 | 48.0 |  |  |
| 215 | eInvoice Integration | Not Started | 0.0 | 2026-07-01 | 2026-08-04 | 25.0 | 48.0 |  |  |
| 216 | Integration Design | Not Started | 0.0 | 2026-07-01 | 2026-07-06 | 4.0 | 69.0 |  |  |
| 217 | Mapping activity for Integration | Not Started | 0.0 | 2026-07-01 | 2026-07-01 | 1.0 | 69.0000001042 | UniSan Integration Team, Zycus Integration Specialist | 276 |
| 218 | Share TDD for interface | Not Started | 0.0 | 2026-07-02 | 2026-07-02 | 1.0 | 69.0000000694 | Zycus Integration Lead | 216 |
| 219 | Review of TDD and share feedback with Zycus | Not Started | 0.0 | 2026-07-03 | 2026-07-03 | 1.0 | 69.0000000347 | UniSan Integration Team | 217 |
| 220 | Sign off on TDD | Not Started | 0.0 | 2026-07-06 | 2026-07-06 | 1.0 | 69.0 | UniSan Integration Team | 218 |
| 221 | Development and Testing on STAGING Set Up | Not Started | 0.0 | 2026-07-15 | 2026-08-04 | 15.0 | 48.0 |  |  |
| 222 | Integration set up and development at Zycus | Not Started | 0.0 | 2026-07-15 | 2026-07-21 | 5.0 | 47.0000000694 | Zycus Integration Specialist | 280 |
| 223 | Integration development at UniSan - as applicable | Not Started | 0.0 | 2026-07-22 | 2026-07-28 | 5.0 | 47.0000001042 | UniSan Integration Team | 221 |
| 224 | Integration Unit Testing and Feedback Incorporation | Not Started | 0.0 | 2026-07-29 | 2026-07-30 | 2.0 | 47.0000000694 | Zycus Integration Team | 221, 222 |
| 225 | Systems Integration Testing | Not Started | 0.0 | 2026-07-31 | 2026-08-04 | 3.0 | 48.0 |  |  |
| 226 | SIT on STAGING Set Up | Not Started | 0.0 | 2026-07-31 | 2026-08-04 | 3.0 | 47.0000000347 | UniSan Integration Team, Zycus Integration Team | 223 |
| 227 | Sign off on SIT | Not Started | 0.0 | 2026-08-04 | 2026-08-04 | 1.0 | 48.0 | UniSan Integration Team | 225FF |
| 228 | eInvoice Integration: Completion of Design | Not Started | 0.0 | 2026-07-06 | 2026-07-06 | 0.0 | 69.0 |  | 215 |
| 229 | eInvoice Integration: Completion of Development and Testing | Not Started | 0.0 | 2026-08-04 | 2026-08-04 | 0.0 | 48.0 |  | 220 |
| 230 | eInvoice Integration: Completion of SIT | Not Started | 0.0 | 2026-08-04 | 2026-08-04 | 0.0 | 48.0 |  | 224 |
| 231 | Contract Management with Basic Setup | In Progress | 0.03 | 2026-07-14 | 2026-08-07 | 19.0 | 45.0 |  |  |
| 232 | iContract Deployment (Repository + Authoring) | Not Started | 0.0 | 2026-07-22 | 2026-07-28 | 5.0 | 53.0 |  |  |
| 233 | Functional Configuration on STAGING set Up | Not Started | 0.0 | 2026-07-22 | 2026-07-28 | 5.0 | 53.0 |  |  |
| 234 | User Role Configuration | Not Started | 0.0 | 2026-07-22 | 2026-07-22 | 1.0 | 23.0000000347 | Zycus Product Specialist | 163 |
| 235 | Admin Settings Configuration | Not Started | 0.0 | 2026-07-22 | 2026-07-22 | 0.0 | 57.0 | Zycus Product Specialist | 233 |
| 236 | Readiness for Pre-UAT | Not Started | 0.0 | 2026-07-23 | 2026-07-23 | 1.0 | 23.0000001389 | Zycus Product Specialist | 233 |
| 237 | Pre-UAT | Not Started | 0.0 | 2026-07-24 | 2026-07-28 | 3.0 | 53.0 |  |  |
| 238 | Pre-UAT - Provide End to end walkthrough of configured iContract to UniSan | Not Started | 0.0 | 2026-07-24 | 2026-07-24 | 1.0 | 16.0000001389 | UniSan Core Project Team, Zycus Consultant, Zycus Product Specialist | 235 |
| 239 | Provide feedback - if any for iContract configuration | Not Started | 0.0 | 2026-07-27 | 2026-07-28 | 2.0 | 13.0000000347 | UniSan Project Team | 237 |
| 240 | Zycus to incorporate feedback - as applicable and share final version of Implementation Approach Document [IAD] | Not Started | 0.0 | 2026-07-28 | 2026-07-28 | 1.0 | 23.0000001389 | Zycus Consultant, Zycus Product Specialist | 238SS +1d |
| 241 | Sign off on Pre-UAT and final version of IAD sign off | Not Started | 0.0 | 2026-07-28 | 2026-07-28 | 0.0 | 21.0000001389 | UniSan Project Manager | 239 |
| 242 | iContract: Conclude Functional Configuration | Not Started | 0.0 | 2026-07-29 | 2026-08-04 | 5.0 | 48.0 |  | 240 |
| 243 | Historical contracts Bulk Upload [up to 25,000 contracts] | In Progress | 0.05 | 2026-07-14 | 2026-08-07 | 19.0 | 45.0 |  |  |
| 244 | Zycus to provide walkthrough of shared template to UniSan | In Progress | 0.4 | 2026-07-14 | 2026-07-14 | 1.0 | 41.0000002083 | UniSan Project Team, Zycus Product Specialist | 240FS -11d |
| 245 | UniSan to provide historical contracts details for Bulk Upload | In Progress | 0.4 | 2026-07-15 | 2026-07-16 | 2.0 | 43.0000001736 | UniSan IT Team | 243 |
| 246 | Zycus to review shared details and provide feedback - if any | Not Started | 0.0 | 2026-07-15 | 2026-07-16 | 2.0 | 43.0000001389 | Zycus Product Specialist | 244FF |
| 247 | UniSan to incorporate feedback and provide revised final details of historical contracts for bulk upload into iContract | Not Started | 0.0 | 2026-07-17 | 2026-07-20 | 2.0 | 45.0000000694 | UniSan IT Team | 245 |
| 248 | Zycus to ensure supplier details availability in STAGING | Not Started | 0.0 | 2026-07-17 | 2026-07-20 | 2.0 | 45.0000001042 | Zycus Product Specialist | 246FF, 266 |
| 249 | Zycus to bulk upload historical contracts details in STGAING [10 contracts for each Type/Subtype] | Not Started | 0.0 | 2026-07-21 | 2026-07-22 | 2.0 | 45.0000000694 | Zycus Product Specialist | 246, 247 |
| 250 | UniSan to review uploaded details and provide go ahead for bulk upload into PRODUCTION | Not Started | 0.0 | 2026-07-23 | 2026-07-24 | 2.0 | 45.0000000347 | UniSan Project Team | 248, 269 |
| 251 | Zycus to bulk upload historical contracts details in Production | Not Started | 0.0 | 2026-07-27 | 2026-08-07 | 10.0 | 45.0 | Zycus Product Specialist | 249 |
| 252 | Supplier Information Management with Integration | In Progress | 0.12 | 2026-06-12 | 2026-08-11 | 43.0 | 43.0 |  |  |
| 253 | iSupplier Deployment | In Progress | 0.13 | 2026-06-12 | 2026-08-11 | 43.0 | 43.0 |  |  |
| 254 | Design & Development on STAGING Set UP | In Progress | 0.13 | 2026-06-12 | 2026-08-11 | 43.0 | 43.0 |  |  |
| 255 | Users,Roles,Workflow & View Definition Configuration | Not Started | 0.0 | 2026-07-22 | 2026-07-22 | 1.0 | 23.0000001389 |  |  |
| 256 | Configure User Roles, View Definition and Workflow as per IAD | Not Started | 0.0 | 2026-07-22 | 2026-07-22 | 1.0 | 42.0000000694 | Zycus Product Specialist | 163 |
| 257 | UniSan to provide feedback | Not Started | 0.0 | 2026-07-22 | 2026-07-22 | 0.0 | 42.0000000694 | UniSan Core Project Team, UniSan Subject Matter Expert | 255 |
| 258 | Pre-UAT on STAGING Set UP | In Progress | 0.05 | 2026-06-12 | 2026-07-22 | 29.0 | 57.0 |  |  |
| 259 | Pre-UAT - Provide End to end walkthrough of configured iSupplier to UniSan | Not Started | 0.0 | 2026-07-22 | 2026-07-22 | 0.0 | 23.0000001389 | Zycus Consultant, Zycus Product Specialist | 254 |
| 260 | Provide feedback - if any for iSupplier configuration | Not Started | 0.0 | 2026-07-22 | 2026-07-22 | 0.0 | 23.0000001389 | UniSan Project Team | 258 |
| 261 | Zycus to incorporate feedback - as applicable and share final version of Implementation Approach Document [IAD] | Not Started | 0.0 | 2026-07-22 | 2026-07-22 | 0.0 | 22.0000001736 | Zycus Consultant | 258, 259 |
| 262 | Sign off on Pre-UAT and final version of IAD | Not Started | 0.0 | 2026-07-22 | 2026-07-22 | 0.0 | 21.0000001389 | UniSan Project Manager, Zycus Project Manager | 260 |
| 263 | Supplier Bulk Upload on STAGING | In Progress | 0.05 | 2026-06-12 | 2026-07-15 | 24.0 | 62.0 |  |  |
| 264 | UniSan to provide supplier bulk upload data in the template provided by Zycus from UniSan's Staging environment | In Progress | 0.5 | 2026-06-12 | 2026-06-12 | 1.0 | 45.0000000347 | UniSan IT Project Manager, UniSan IT Team, UniSan Project Manager | 260FS -29d |
| 265 | Zycus to review the files and provide feedback | In Progress | 0.5 | 2026-06-15 | 2026-06-15 | 1.0 | 45.0000000347 | Zycus Product Specialist | 263 |
| 266 | UniSan to provide updated bulk upload data | Not Started | 0.0 | 2026-06-23 | 2026-06-24 | 2.0 | 45.0000000347 | UniSan IT Project Manager, UniSan IT Team, UniSan Project Manager | 264FS +5d |
| 267 | Zycus to bulk upload supplier data on STAGING setup | Not Started | 0.0 | 2026-06-25 | 2026-06-26 | 2.0 | 45.0000000347 | Zycus Product Specialist | 265 |
| 268 | UniSan to review bulk uploaded data | Not Started | 0.0 | 2026-06-29 | 2026-07-01 | 3.0 | 49.0000001389 | UniSan Core Project Team | 266 |
| 269 | UniSan to sign off on supplier bulk upload | Not Started | 0.0 | 2026-07-01 | 2026-07-01 | 1.0 | 50.0000001042 | UniSan Project Manager | 267FF |
| 270 | UniSan Prod migration Supplier | Not Started | 0.0 | 2026-07-02 | 2026-07-15 | 10.0 | 50.0000000694 | Zycus Product Specialist | 268 |
| 271 | Integration iSupplier | In Progress | 0.38 | 2026-06-25 | 2026-07-16 | 16.0 | 61.0 |  |  |
| 272 | iSupplier Integration | In Progress | 0.38 | 2026-06-25 | 2026-07-16 | 16.0 | 61.0 |  |  |
| 273 | Integration Design | In Progress | 0.63 | 2026-06-25 | 2026-06-30 | 4.0 | 73.0 |  |  |
| 274 | Mapping activity for Integration | Completed | 1.0 | 2026-06-25 | 2026-06-25 | 1.0 | 24.0000000347 | UniSan Integration Team, Zycus Integration Specialist | 200 |
| 275 | Share TDD for interface | Completed | 1.0 | 2026-06-26 | 2026-06-26 | 1.0 | 27.0000000347 | Zycus Integration Lead | 273 |
| 276 | Review of TDD and share feedback with Zycus | In Progress | 0.5 | 2026-06-29 | 2026-06-29 | 1.0 | 24.0000000347 | UniSan Integration Team | 274 |
| 277 | Sign off on TDD | Not Started | 0.0 | 2026-06-30 | 2026-06-30 | 1.0 | 27.0000000347 | UniSan Integration Team | 275 |
| 278 | Development and Testing on STAGING Set Up | In Progress | 0.29 | 2026-07-01 | 2026-07-16 | 12.0 | 61.0 |  |  |
| 279 | Integration set up and development at Zycus | In Progress | 0.8 | 2026-07-06 | 2026-07-10 | 5.0 | 24.0000000347 | Zycus Integration Specialist | 276FS +3d |
| 280 | Integration development at UniSan - as applicable | Not Started | 0.0 | 2026-07-01 | 2026-07-07 | 5.0 | 24.0000000347 | UniSan Integration Team | 276 |
| 281 | Integration Unit Testing and Feedback Incorporation | Not Started | 0.0 | 2026-07-13 | 2026-07-14 | 2.0 | 24.0000000347 | Zycus Integration Team | 278, 279 |

| row_number | name | status | percent_complete | start_date | end_date | duration_days | total_float | critical | assigned_to | predecessors |
| --- | --- | --- | --- | --- | --- | --- | --- | --- | --- | --- |
| 282 | Systems Integration Testing | Not Started | 0.0 | 2026-07-15 | 2026-07-16 | 2.0 | 61.0 |  |  |  |
| 283 | SIT on STAGING Set Up | Not Started | 0.0 | 2026-07-15 | 2026-07-16 | 2.0 | 23.0000000347 |  | UniSan Integration Team, Zycus Integration Team | 280 |
| 284 | Sign off on SIT | Not Started | 0.0 | 2026-07-16 | 2026-07-16 | 1.0 | 23.0000001736 |  | UniSan Integration Team | 282FF |
| 285 | eInvoice Integration: Completion of Design | Not Started | 0.0 | 2026-06-30 | 2026-06-30 | 0.0 | 73.0 |  |  | 272 |
| 286 | eInvoice Integration: Completion of Development and Testing | Not Started | 0.0 | 2026-07-16 | 2026-07-16 | 0.0 | 61.0 |  |  | 277 |
| 287 | eInvoice Integration: Completion of SIT | Not Started | 0.0 | 2026-07-16 | 2026-07-16 | 0.0 | 61.0 |  |  | 281 |
| 288 | Integration iSupplier - Exiger | Not Started | 0.0 | 2026-07-23 | 2026-08-11 | 14.0 | 43.0 |  |  |  |
| 289 | iSupplier Integration | Not Started | 0.0 | 2026-07-23 | 2026-08-11 | 14.0 | 43.0 |  |  |  |
| 290 | Integration Design | Not Started | 0.0 | 2026-07-23 | 2026-07-28 | 4.0 | 53.0 |  |  |  |
| 291 | Mapping activity for Integration | Not Started | 0.0 | 2026-07-23 | 2026-07-23 | 1.0 | 42.0000000694 |  | UniSan Integration Team, Zycus Integration Specialist | 256 |
| 292 | Share TDD for interface | Not Started | 0.0 | 2026-07-24 | 2026-07-24 | 1.0 | 42.0000000694 |  | Zycus Integration Lead | 290 |
| 293 | Review of TDD and share feedback with Zycus | Not Started | 0.0 | 2026-07-27 | 2026-07-27 | 1.0 | 42.0000000694 |  | UniSan Integration Team | 291 |
| 294 | Sign off on TDD | Not Started | 0.0 | 2026-07-28 | 2026-07-28 | 1.0 | 42.0000000694 |  | UniSan Integration Team | 292 |
| 295 | Development and Testing on STAGING Set Up | Not Started | 0.0 | 2026-07-29 | 2026-08-11 | 10.0 | 43.0 |  |  |  |
| 296 | Integration set up and development at Zycus | Not Started | 0.0 | 2026-07-29 | 2026-08-04 | 5.0 | 42.0000001042 |  | Zycus Integration Specialist | 293 |
| 297 | Integration development at UniSan - as applicable | Not Started | 0.0 | 2026-07-29 | 2026-08-04 | 5.0 | 42.0000001042 |  | UniSan Integration Team | 293 |
| 298 | Integration Unit Testing and Feedback Incorporation | Not Started | 0.0 | 2026-08-05 | 2026-08-06 | 2.0 | 42.0000000694 |  | Zycus Integration Team | 295, 296 |
| 299 | Systems Integration Testing | Not Started | 0.0 | 2026-08-07 | 2026-08-11 | 3.0 | 43.0 |  |  |  |
| 300 | SIT on STAGING Set Up | Not Started | 0.0 | 2026-08-07 | 2026-08-11 | 3.0 | 42.0000000347 |  | UniSan Integration Team, Zycus Integration Team | 297 |
| 301 | Sign off on SIT | Not Started | 0.0 | 2026-08-11 | 2026-08-11 | 1.0 | 43.0 |  | UniSan Integration Team | 299FF |
| 302 | eInvoice Integration: Completion of Design | Not Started | 0.0 | 2026-07-28 | 2026-07-28 | 0.0 | 53.0 |  |  | 289 |
| 303 | eInvoice Integration: Completion of Development and Testing | Not Started | 0.0 | 2026-08-11 | 2026-08-11 | 0.0 | 43.0 |  |  | 294 |
| 304 | eInvoice Integration: Completion of SIT | Not Started | 0.0 | 2026-08-11 | 2026-08-11 | 0.0 | 43.0 |  |  | 298 |
| 305 | iSupplier: Conclude Functional Configuration | Not Started | 0.0 | 2026-07-22 | 2026-07-22 | 0.0 | 57.0 |  |  | 257 |
| 306 | Value KPI Report creation on Staging | Not Started | 0.0 | 2026-07-23 | 2026-07-24 | 2.0 | 51.0000000694 |  | UniSan Project Group, Zycus Product Specialist, Zycus Project Manager | 261 |
| 307 | Value KPI Report demo on Staging | Not Started | 0.0 | 2026-07-27 | 2026-07-28 | 2.0 | 51.0000000347 |  | UniSan Project Group, Zycus Product Specialist, Zycus Project Manager | 305 |
| 308 | iSource Configuration | Not Started | 0.0 | 2026-07-22 | 2026-08-06 | 12.0 | 46.0 |  |  |  |
| 309 | iSource Deployment | Not Started | 0.0 | 2026-07-22 | 2026-08-06 | 12.0 | 46.0 |  |  |  |
| 310 | Functional Configuration Finalization on STAGING set Up | Not Started | 0.0 | 2026-07-22 | 2026-08-06 | 12.0 | 46.0 |  |  |  |
| 311 | User Roles configuration | Not Started | 0.0 | 2026-07-22 | 2026-07-22 | 1.0 | 0.0 | True | Zycus Product Specialist | 163 |
| 312 | Admin settings configuration | Not Started | 0.0 | 2026-07-23 | 2026-07-24 | 2.0 | 0.0 | True | Zycus Product Specialist | 310 |
| 313 | Readiness for Pre-UAT | Not Started | 0.0 | 2026-07-27 | 2026-07-28 | 2.0 | 0.0 | True | Zycus Product Specialist | 311 |
| 314 | Pre-UAT on STAGING | Not Started | 0.0 | 2026-07-29 | 2026-08-06 | 7.0 | 46.0 |  |  |  |
| 315 | Pre-UAT - Provide End to end walkthrough of configured iSource to the Customer | Not Started | 0.0 | 2026-07-29 | 2026-07-30 | 2.0 | 0.0 | True | Zycus Consultant, Zycus Product Specialist | 312 |
| 316 | Provide feedback - if any for iSource configuration | Not Started | 0.0 | 2026-07-31 | 2026-08-04 | 3.0 | 0.0 | True | UniSan Project Manager | 314 |
| 317 | Zycus to incorporate feedback - as applicable and share final version of Implementation Approach Document [IAD] | Not Started | 0.0 | 2026-08-05 | 2026-08-06 | 2.0 | 0.0 | True | Zycus Consultant, Zycus Product Specialist | 314, 315 |
| 318 | Sign off on Pre-UAT and final version of IAD | Not Started | 0.0 | 2026-08-06 | 2026-08-06 | 0.0 | 0.0 | True | UniSan Project Manager | 316 |
| 319 | iSource : Conclude Functional Configuration | Not Started | 0.0 | 2026-08-06 | 2026-08-06 | 0.0 | 23.0000001736 |  |  | 317 |
| 320 | Merlin Intake Configuration | Not Started | 0.0 | 2026-07-22 | 2026-08-05 | 11.0 | 47.0 |  |  |  |
| 321 | Merlin intake Deployment | Not Started | 0.0 | 2026-07-22 | 2026-08-05 | 11.0 | 47.0 |  |  |  |
| 322 | Functional Configuration Finalization on STAGING set Up | Not Started | 0.0 | 2026-07-22 | 2026-08-05 | 11.0 | 47.0 |  |  |  |
| 323 | User Roles configuration | Not Started | 0.0 | 2026-07-22 | 2026-07-22 | 1.0 | 4.0000002778 |  | Zycus Product Specialist | 163 |
| 324 | Admin settings configuration | Not Started | 0.0 | 2026-07-23 | 2026-07-24 | 2.0 | 4.0000002778 |  | Zycus Product Specialist | 322 |
| 325 | Readiness for Pre-UAT | Not Started | 0.0 | 2026-07-27 | 2026-07-28 | 2.0 | 4.0000002778 |  | Zycus Product Specialist | 323 |
| 326 | Pre-UAT on STAGING | Not Started | 0.0 | 2026-07-29 | 2026-08-05 | 6.0 | 47.0 |  |  |  |
| 327 | Pre-UAT - Provide End to end walkthrough of configured Merlin Intake to the Customer | Not Started | 0.0 | 2026-07-29 | 2026-07-30 | 2.0 | 4.0000002778 |  | Zycus Consultant, Zycus Product Specialist | 324 |
| 328 | Provide feedback - if any for Merlin Intake configuration | Not Started | 0.0 | 2026-07-31 | 2026-08-03 | 2.0 | 4.0000002778 |  | UniSan Project Manager | 326 |
| 329 | Zycus to incorporate feedback - as applicable and share final version of Implementation Approach Document [IAD] | Not Started | 0.0 | 2026-08-04 | 2026-08-05 | 2.0 | 4.0000002778 |  | Zycus Consultant, Zycus Product Specialist | 326, 327 |
| 330 | Sign off on Pre-UAT and final version of IAD | Not Started | 0.0 | 2026-08-05 | 2026-08-05 | 0.0 | 4.0000002778 |  | UniSan Project Manager | 328 |
| 331 | Merlin Intake : Conclude Functional Configuration | Not Started | 0.0 | 2026-08-05 | 2026-08-05 | 0.0 | 4.0000002778 |  |  | 329 |
| 332 | User Acceptance Testing (UAT) Phase II | Not Started | 0.0 | 2026-08-07 | 2026-08-24 | 12.0 | 34.0 |  |  |  |
| 333 | Prepare for UAT | Not Started | 0.0 | 2026-08-07 | 2026-08-12 | 4.0 | 42.0 |  |  |  |
| 334 | Prepare the UAT Approach | Not Started | 0.0 | 2026-08-07 | 2026-08-07 | 1.0 | 0.0 | True | Zycus Product Specialist, Zycus Project Manager | 317, 330 |
| 335 | Finalize and agree on UAT Approach | Not Started | 0.0 | 2026-08-10 | 2026-08-10 | 1.0 | 0.0 | True | UniSan Core Project Team, UniSan Project Manager | 333 |
| 336 | Provide users & roles on STAGING required for UAT | Not Started | 0.0 | 2026-08-10 | 2026-08-10 | 1.0 | 43.0000000347 |  | UniSan Project Manager, UniSan Project Team, UniSan SME | 333 |
| 337 | Create users on STAGING set for UAT group | Not Started | 0.0 | 2026-08-11 | 2026-08-11 | 1.0 | 43.0 |  | Zycus Product Specialist | 335 |
| 338 | Provide Standard Test Cases | Not Started | 0.0 | 2026-08-11 | 2026-08-11 | 1.0 | 0.0 | True | Zycus Consultant, Zycus Product Specialist | 334 |
| 339 | Finalize Test Cases | Not Started | 0.0 | 2026-08-12 | 2026-08-12 | 1.0 | 0.0 | True | UniSan Core Project Team | 337 |
| 340 | Quality Reviews | Not Started | 0.0 | 2026-08-07 | 2026-08-10 | 2.0 | 44.0 |  |  |  |
| 341 | Schedule for quality check | Not Started | 0.0 | 2026-08-07 | 2026-08-07 | 1.0 | 23.0000001736 |  | Zycus Product Specialist | 178, 240, 261, 318, 330, 283 |
| 342 | Perform quality checks, PSRs as per quality checklist and submit to QC team | Not Started | 0.0 | 2026-08-10 | 2026-08-10 | 1.0 | 23.0000001389 |  | Zycus Product Specialist | 340 |
| 343 | Quality Check by Zycus QC team | Not Started | 0.0 | 2026-08-10 | 2026-08-10 | 0.0 | 21.0000001389 |  | Zycus Quality Team | 341 |
| 344 | End-to-End UAT | Not Started | 0.0 | 2026-08-11 | 2026-08-24 | 10.0 | 34.0 |  |  |  |
| 345 | UAT Intake and iSource | Not Started | 0.0 | 2026-08-13 | 2026-08-17 | 3.0 | 0.0 | True | UniSan Core Project Team | 317, 330, 338 |
| 346 | Defect Analysis & UAT Feedback incorporation and share Test Closure Memo | Not Started | 0.0 | 2026-08-14 | 2026-08-18 | 3.0 | 0.0 | True | Zycus Project Team | 344SS +1d |
| 347 | UniSan to provide sign off on Test Closure Memo | Not Started | 0.0 | 2026-08-19 | 2026-08-20 | 2.0 | 0.0 | True | UniSan Core Project Team, UniSan Project Manager | 345 |
| 348 | UAT iSupplier, eProc, eInvoice and CLM | Not Started | 0.0 | 2026-08-11 | 2026-08-19 | 7.0 | 18.0000000347 |  | UniSan Core Project Team | 240, 261, 177, 342 |
| 349 | Defect Analysis & UAT Feedback incorporation and share Test Closure Memo | Not Started | 0.0 | 2026-08-12 | 2026-08-20 | 7.0 | 24.0000000347 |  | Zycus Project Team | 347SS +1d |
| 350 | UniSan to provide sign off on Test Closure Memo | Not Started | 0.0 | 2026-08-21 | 2026-08-24 | 2.0 | 24.0 |  | UniSan Core Project Team, UniSan Project Manager | 348 |
| 351 | UAT Completion | Not Started | 0.0 | 2026-08-24 | 2026-08-24 | 0.0 | 24.0000000347 |  |  | 346, 349 |

| row_number | name | status | percent_complete | start_date | end_date | duration_days | total_float | critical | assigned_to | predecessors |
| --- | --- | --- | --- | --- | --- | --- | --- | --- | --- | --- |
| 352 | Value KPI Sign-off | Not Started | 0.0 | 2026-07-28 | 2026-07-28 | 0.0 | 51.0000000347 |  | UniSan Project Group, Zycus Product Specialist, Zycus Project Manager | 306 |
| 353 | Training Phase II | Not Started | 0.0 | 2026-08-18 | 2026-09-02 | 12.0 | 27.0 |  |  |  |
| 354 | Training Preparation | Not Started | 0.0 | 2026-08-18 | 2026-08-19 | 2.0 | 37.0 |  |  |  |
| 355 | Training Approach and Schedule finalization | Not Started | 0.0 | 2026-08-18 | 2026-08-18 | 1.0 | 35.0000001042 |  | UniSan Project Manager, Zycus Project Manager, Zycus University | 344 |
| 356 | Training Agenda Finalization | Not Started | 0.0 | 2026-08-19 | 2026-08-19 | 1.0 | 35.0000000694 |  | UniSan Project Manager, Zycus University Trainer | 354 |
| 357 | Train The Trainer | Not Started | 0.0 | 2026-08-21 | 2026-09-02 | 9.0 | 27.0 |  |  |  |
| 358 | iContract + Merlin for Contract Training | Not Started | 0.0 | 2026-08-25 | 2026-08-26 | 2.0 | 27.0000001042 |  | UniSan Project Team, Zycus University Trainer | 349 |
| 359 | iSource Training | Not Started | 0.0 | 2026-08-21 | 2026-08-21 | 1.0 | 34.0000000347 |  | UniSan Project Team, Zycus University Trainer | 346, 355 |
| 360 | eProc Training | Not Started | 0.0 | 2026-08-27 | 2026-08-28 | 2.0 | 27.0000000694 |  | UniSan Project Team, Zycus University Trainer | 357 |
| 361 | eInvoice and Merlin APSD Training | Not Started | 0.0 | 2026-08-31 | 2026-08-31 | 1.0 | 27.0000000347 |  | UniSan Project Team, Zycus University Trainer | 359 |
| 362 | Merlin Intake | Not Started | 0.0 | 2026-08-24 | 2026-08-24 | 1.0 | 34.0 |  | UniSan Project Team, Zycus University Trainer | 358 |
| 363 | Admin Training | Not Started | 0.0 | 2026-09-01 | 2026-09-02 | 2.0 | 27.0 |  | UniSan Project Team, Zycus University Trainer | 360 |
| 364 | Training Completion | Not Started | 0.0 | 2026-09-02 | 2026-09-02 | 0.0 | 27.0 |  |  | 362 |
| 365 | Production Migration Phase II | Not Started | 0.0 | 2026-08-21 | 2026-09-07 | 12.0 | 24.0 |  |  |  |
| 366 | Migration of Solution from STAGING Environment to PRODUCTION | Not Started | 0.0 | 2026-08-21 | 2026-09-07 | 12.0 | 24.0 |  |  |  |
| 367 | Configuration migration to PRODUCTION - iSource and Merlin Intake | Not Started | 0.0 | 2026-08-21 | 2026-08-25 | 3.0 | 33.0 |  | Zycus Product Specialist | 346 |
| 368 | Configuration migration to PRODUCTION - iSupplier, eProc, eInvoice and CLM | Not Started | 0.0 | 2026-08-25 | 2026-08-31 | 5.0 | 24.0000000347 |  | Zycus Product Specialist | 350 |
| 369 | Provide the final list of users to be created on PRODUCTION | Not Started | 0.0 | 2026-08-21 | 2026-08-24 | 2.0 | 0.0 | True | UniSan Holdings SME, UniSan Project Manager, TKC Holdings Project Team | 346 |
| 370 | Creation of Specified Users as per roles | Not Started | 0.0 | 2026-08-25 | 2026-08-28 | 4.0 | 0.0 | True | Zycus Product Specialist | 368 |
| 371 | Migrate integration code to Prod | Not Started | 0.0 | 2026-09-01 | 2026-09-07 | 5.0 | 24.0 |  | UniSan Integration Team | 346, 349, 367 |
| 372 | Quality Reviews | Not Started | 0.0 | 2026-08-31 | 2026-09-01 | 2.0 | 28.0 |  |  |  |
| 373 | Schedule for quality check | Not Started | 0.0 | 2026-08-31 | 2026-08-31 | 1.0 | 0.0 | True | Zycus Product Specialist | 369 |
| 374 | Perform quality checks, PSRs as per quality checklist and submit to QC team | Not Started | 0.0 | 2026-09-01 | 2026-09-01 | 1.0 | 0.0 | True | Zycus Product Specialist | 372 |
| 375 | Quality Check by Zycus QC team | Not Started | 0.0 | 2026-09-01 | 2026-09-01 | 0.0 | 0.0 | True | Zycus Quality Team | 373 |
| 376 | Sanity on Production - iSource and Merlin Intake | Not Started | 0.0 | 2026-09-02 | 2026-09-02 | 1.0 | 25.0000000694 |  | UniSan IT Team, UniSan Integration Team, UniSan Project Manager, UniSan SME, UniSan Subject Matter Expert | 374 |
| 377 | Go /No-go Check Point ( Meeting with UniSan) - iSource and Merlin Intake | Not Started | 0.0 | 2026-09-03 | 2026-09-03 | 1.0 | 25.0000000347 |  | UniSan Project Manager | 375 |
| 378 | Release Zycus system to all users - iSource and Merlin Intake | Not Started | 0.0 | 2026-09-04 | 2026-09-04 | 1.0 | 25.0 |  | Zycus Product Specialist | 376 |
| 379 | KPI Reports to be migrated on PROD | Not Started | 0.0 | 2026-09-01 | 2026-09-02 | 2.0 | 27.0 |  | UniSan Project Group, Zycus Product Specialist, Zycus Project Manager | 351, 367 |
| 380 | Sanity on Production - iSupplier, eProc, eInvoice and CLM | Not Started | 0.0 | 2026-09-08 | 2026-09-09 | 2.0 | 0.0 | True | UniSan IT Team, UniSan Integration Team, UniSan Project Manager, UniSan SME, UniSan Subject Matter Expert | 374FS +4d |
| 381 | Go /No-go Check Point ( Meeting with UniSan) - iSupplier, eProc, eInvoice and CLM | Not Started | 0.0 | 2026-09-10 | 2026-09-10 | 1.0 | 0.0 | True | UniSan Project Manager | 379 |
| 382 | Release Zycus system to all users - iSupplier, eProc, eInvoice and CLM | Not Started | 0.0 | 2026-09-11 | 2026-09-11 | 1.0 | 0.0 | True | Zycus Product Specialist | 380 |
| 383 | Production Go-Live Phase II | Not Started | 0.0 | 2026-09-11 | 2026-09-11 | 0.0 | 0.0 | True |  | 381 |
| 384 | Hypercare Phase II | Not Started | 0.0 | 2026-09-14 | 2026-10-09 | 20.0 | 0.0 | True | UniSan IT Team, UniSan Integration Team, UniSan Project Group, Zycus Consultant, Zycus Integration Team, Zycus Product Specialist, Zycus Project Manager | 382 |
